# PRD2018-G12-甘特图11

How a schedule from MS Project changed from version to version. A marks actual dates.

## Version 1 (data date 2018-10-30, saved 2018-12-21)

| ID | WBS | Task | Duration | Start | Finish | Predecessors | Complete | Constraint |
| --- | --- | --- | --- | --- | --- | --- | --- | --- |
| 1 | * | **软件工程系列课程教学辅助网站-需求工程项目** | 37d | 2018-09-19 08:00 | 2019-01-16 17:00 |  | 45% |  |
| 2 | *.1 | **项目启动** | 1d | 2018-09-19 19:00 A | 2018-09-23 20:00 |  | 88% |  |
| 3 |  | 确定小组人员并成立G12小组 | 0.4d | 2018-09-19 19:00 A | 2018-09-20 20:00 A |  | 100% |  |
| 4 |  | 项目任务书下达 | 0.2d | 2018-09-20 19:00 A | 2018-09-20 20:00 A | 3 | 100% |  |
| 5 |  | 安装配置管理工具初步 | 0.6d | 2018-09-21 19:00 A | 2018-09-24 20:00 | 4 | 67% |  |
| 6 |  | logo设计 | 0.4d | 2018-09-21 19:00 A | 2018-09-22 20:00 A | 4 | 100% |  |
| 7 | 1.2 | **知识储备** | 18.9d | 2018-10-08 19:00 A | 2018-12-23 20:00 |  | 60% |  |
| 8 | 1.2.1 | **UML概述** | 1.4d | 2018-10-08 19:00 A | 2018-10-14 20:00 |  | 100% |  |
| 9 |  | PPT1-4部分 | 0.2d | 2018-10-08 19:00 A | 2018-10-10 20:00 A |  | 100% |  |
| 10 |  | PPT 第5部分 | 0.6d | 2018-10-08 19:00 A | 2018-10-10 20:00 A |  | 100% |  |
| 11 |  | PPT 第6部分 | 0.6d | 2018-10-08 19:00 A | 2018-10-10 20:00 A |  | 100% |  |
| 12 |  | PPT 第7部分 | 0.4d | 2018-10-08 19:00 A | 2018-10-09 20:00 A |  | 100% |  |
| 13 |  | PPT第8部分 | 0.4d | 2018-10-09 19:00 A | 2018-10-10 20:00 A |  | 100% |  |
| 14 |  | 整合制成PPt | 0.2d | 2018-10-12 19:00 A | 2018-10-12 20:00 A | 9, 10, 11, 12, 13 | 100% |  |
| 15 |  | 审核检查 | 0.2d | 2018-10-13 19:00 A | 2018-10-13 20:00 A | 14 | 100% |  |
| 16 | 1.2.2 | **UML工具** | 1.4d | 2018-10-15 19:00 A | 2018-10-21 20:00 | 8 | 88% |  |
| 17 |  | PPT 第1部分资料收集 | 0.4d | 2018-10-15 19:00 A | 2018-10-16 20:00 A |  | 100% |  |
| 18 |  | PPT 2-5部分资料收集 | 0.2d | 2018-10-15 19:00 A | 2018-10-17 20:00 | 17FF, 20FF, 21FF, 22FF |  |  |
| 19 |  | PPT资料整合及审核 | 0.2d | 2018-10-20 19:00 A | 2018-10-20 20:00 A | 18, 17, 20, 21, 22 | 100% |  |
| 20 |  | PPT 第6部分资料收集 | 0.2d | 2018-10-15 19:00 A | 2018-10-17 20:00 A |  | 100% |  |
| 21 |  | PPT 第7部分资料收集 | 0.2d | 2018-10-15 19:00 A | 2018-10-15 20:00 A |  | 100% |  |
| 22 |  | PPT 第8部分资料收集 | 0.4d | 2018-10-15 19:00 A | 2018-10-16 20:00 A |  | 100% |  |
| 23 | 1.2.3 | **UML基础1** | 1.4d | 2018-10-22 19:00 A | 2018-10-28 20:00 | 16 | 100% |  |
| 24 |  | PPT 第2部分 | 0.1d | 2018-10-22 19:00 A | 2018-10-22 20:00 A |  | 100% |  |
| 25 |  | PPT 第3部分 | 0.2d | 2018-10-22 19:00 A | 2018-10-22 20:00 A |  | 100% |  |
| 26 |  | PPT 第4部分 | 0.2d | 2018-10-22 19:00 A | 2018-10-22 20:00 A |  | 100% |  |
| 27 |  | PPT 第7部分 | 0.4d | 2018-10-22 19:00 A | 2018-10-23 20:00 A |  | 100% |  |
| 28 |  | PPT 1、5、6、8、9部分 | 0.2d | 2018-10-23 19:00 A | 2018-10-23 20:00 A |  | 100% |  |
| 29 |  | PPT整合及审核 | 0.2d | 2018-10-26 19:00 A | 2018-10-26 20:00 A | 28, 24, 25, 26, 27 | 100% |  |
| 30 | 1.2.4 | **UML基础2** | 1.4d | 2018-10-29 19:00 A | 2018-11-04 20:00 | 23 | 100% |  |
| 31 |  | 修改翻转pptUML基础1 | 0d | 2018-10-29 19:00 A | 2018-10-29 20:00 A | 28 | 100% |  |
| 32 |  | 「原型的定义和动机」部分 | 0.2d | 2018-10-30 19:00 A | 2018-10-30 20:00 A | 31 | 100% |  |
| 33 |  | 「原型成功的因素」和「原型界面介绍」部分PPt资料 | 0.4d | 2018-10-30 19:00 A | 2018-10-31 20:00 A | 31 | 100% |  |
| 34 |  | 「原型风险」部分 | 0.4d | 2018-10-30 19:00 A | 2018-10-31 20:00 A | 31 | 100% |  |
| 35 |  | 「原型的使用和评估」部分 | 0.4d | 2018-10-30 19:00 A | 2018-10-31 20:00 A | 31 | 100% |  |
| 36 |  | 「原型的未来用途和形式」和「Axure RP的界面和使用」部分 | 0.4d | 2018-10-30 19:00 A | 2018-10-31 20:00 A | 31 | 100% |  |
| 37 |  | PPT整合 | 0.2d | 2018-11-02 19:00 A | 2018-11-02 20:00 A | 32, 33, 34, 35, 36 | 100% |  |
| 38 |  | PPt小组内审核及修改 | 0.2d | 2018-11-03 19:00 A | 2018-11-03 20:00 A | 37 | 100% |  |
| 39 | 1.2.5 | **UML基础3** | 4d | 2018-12-07 08:00 | 2018-12-08 08:00 | 30 | 100% |  |
| 40 |  | 搜集第一部分和第三部分资料 | 0.4d | 2018-12-03 19:00 A | 2018-12-04 18:00 A |  | 100% |  |
| 41 |  | 搜集第二部分资料 | 0.4d | 2018-12-03 19:00 A | 2018-12-04 18:00 A |  | 100% |  |
| 42 |  | PPT第一部分及汇总和审核 | 0.2d | 2018-12-05 19:00 A | 2018-12-05 20:00 A | 40FF, 41FF, 43FF, 44FF | 100% | start no earlier than 2018-12-05 19:00 |
| 43 |  | PPT第二部分 | 0.2d | 2018-12-05 19:00 A | 2018-12-05 20:00 A |  | 100% | start no earlier than 2018-12-05 19:00 |
| 44 |  | PPT第三部分 | 0.2d | 2018-12-05 19:00 A | 2018-12-05 20:00 A |  | 100% |  |
| 45 | 1.2.6 | **UML基础4** | 5.2d | 2018-12-10 08:00 | 2018-12-16 17:00 | 39 |  |  |
| 46 |  | 制作ppt | 5.8d | 2018-12-10 08:00 | 2018-12-21 20:00 |  |  |  |
| 47 | 1.3 | **项目计划** | 5.3d | 2018-09-24 19:00 A | 2018-10-28 20:00 | 2 | 100% |  |
| 48 | 1.3.1 | **《可行性分析报告》编写和修订** | 1.4d | 2018-09-24 19:00 A | 2018-09-30 20:00 |  | 100% |  |
| 49 |  | 寻找《可行性分析报告》模板 | 0.2d | 2018-09-24 19:00 A | 2018-09-24 20:00 A | 5 | 100% |  |
| 50 |  | 编写《可行性分析报告1》 | 0.4d | 2018-09-25 19:00 A | 2018-09-26 20:00 A | 49 | 100% |  |
| 51 |  | 编写《可行性分析报告2》 | 0.4d | 2018-09-28 19:00 A | 2018-09-29 20:00 A | 50 | 100% |  |
| 52 |  | 《可行性分析报告》修订1 | 0.2d | 2018-11-30 19:00 A | 2018-11-30 20:00 A | 51 | 100% |  |
| 53 |  | 《可行性分析报告》修订2 | 0.2d | 2018-12-02 19:00 A | 2018-12-02 20:00 A | 52 | 100% |  |
| 54 | 1.3.2 | **《需求工程项目计划》的编写和修订** | 12.4d | 2018-09-24 19:00 A | 2018-12-01 11:00 |  | 100% |  |
| 55 |  | 找寻《项目计划》模板 | 0.2d | 2018-09-24 19:00 A | 2018-09-24 20:00 A |  | 100% |  |
| 56 |  | WBS、OBS的绘制 | 0.6d | 2018-09-24 19:00 A | 2018-09-27 20:00 A | 55 | 100% | start no earlier than 2018-09-24 19:00 |
| 57 |  | 制定《需求工程项目计划》第一部分 | 0.4d | 2018-09-25 19:00 A | 2018-09-26 20:00 A | 55, 6 | 100% |  |
| 58 |  | 制定《需求工程项目计划》第二部分 | 0.38d | 2018-09-28 19:30 A | 2018-10-07 18:30 A | 55 | 100% |  |
| 59 |  | 修订《需求工程项目计划》 | 0.2d | 2018-09-29 19:00 A | 2018-09-29 20:00 A | 57, 58 | 100% |  |
| 60 |  | 第一次修订需求工程计划 | 0.2d | 2018-11-02 19:00 A | 2018-11-02 20:00 A | 59 | 100% |  |
| 61 |  | 审核第一次修订后的需求工程计划 | 0.2d | 2018-11-03 19:00 A | 2018-11-03 20:00 A | 60 | 100% |  |
| 62 |  | 第二次修订需求工程计划 | 0.2d | 2018-11-09 19:00 A | 2018-11-12 20:00 A | 61 | 100% |  |
| 63 |  | 审核第二次修订后的需求工程计划 | 0.2d | 2018-11-10 19:00 A | 2018-11-12 20:00 A | 62 | 100% |  |
| 64 |  | 第三次修订需求工程计划 | 0.2d | 2018-11-16 19:00 A | 2018-11-16 20:00 A | 63 | 100% |  |
| 65 |  | 审核第三次修订后的需求工程计划 | 0.2d | 2018-11-17 19:00 A | 2018-11-17 20:00 A | 64 | 100% |  |
| 66 |  | 修订WBS | 0.2d | 2018-11-16 19:00 A | 2018-11-16 20:00 A | 56 | 100% |  |
| 67 |  | 修订OBS | 0.2d | 2018-11-17 19:00 A | 2018-11-17 20:00 A | 56 | 100% |  |
| 68 |  | 第四次修改需求工程计划 | 0.2d | 2018-11-24 19:00 A | 2018-11-24 20:00 A | 65, 66, 67 | 100% |  |
| 69 |  | 第五次需求工程计划修订 | 0.6d | 2018-11-29 21:00 A | 2018-11-29 23:59 A | 68 | 100% |  |
| 70 | 1.3.3 | **《项目章程》编写和审查** | 9.7d | 2018-10-15 19:00 | 2018-12-01 11:00 |  | 100% |  |

| ID | WBS | Task | Duration | Start | Finish | Predecessors | Complete | Constraint |
| --- | --- | --- | --- | --- | --- | --- | --- | --- |
| 71 |  | 《项目章程模板》寻找 | 0.2d | 2018-10-16 19:00 A | 2018-10-16 20:00 A |  | 100% |  |
| 72 |  | 制定《项目章程》 | 0.2d | 2018-10-16 19:00 A | 2018-10-16 20:00 A | 71 | 100% |  |
| 73 |  | 《项目章程》审核修订1 | 0.2d | 2018-10-20 19:00 A | 2018-10-20 20:00 A | 72 | 100% |  |
| 74 |  | 《项目章程》修订2 | 0.2d | 2018-11-30 19:00 A | 2018-11-30 20:00 A | 73 | 100% |  |
| 75 | *.3 | **项目执行** | 6.9d | 2018-11-05 19:00 A | 2018-12-03 20:00 | 47 | 24% |  |
| 76 | 1.4.1 | **需求获取** | 14.3d | 2018-11-05 19:00 A | 2018-12-31 20:00 |  | 53% |  |
| 77 | *.3.3 | **定义及编写项目视图与范围** | 1d | 2018-11-05 19:00 A | 2018-11-09 20:00 |  | 90% |  |
| 78 |  | 寻找愿景和范围文档模板 | 0.2d | 2018-11-05 19:00 A | 2018-11-05 20:00 A |  | 100% |  |
| 79 |  | 愿景和范围文档第一部分 | 0.2d | 2018-11-06 19:00 A | 2018-11-06 20:00 A | 78 | 100% |  |
| 80 |  | 愿景和范围文档第二部分 | 0.4d | 2018-11-06 19:00 A | 2018-11-09 20:00 A | 78 | 100% |  |
| 81 |  | 愿景和范围文档第三部分 | 0.4d | 2018-11-06 19:00 A | 2018-11-07 20:00 A | 78 | 100% |  |
| 82 |  | 汇总并修改愿景与范围文档 | 0.4d | 2018-11-12 19:00 A | 2018-11-13 20:00 A | 79, 80, 81 | 100% | start no earlier than 2018-11-12 10:00 |
| 83 |  | 愿景与范围文档修改1 | 0.2d | 2018-11-19 19:00 A | 2018-11-19 20:00 A | 82 | 100% |  |
| 84 |  | 愿景与范围文档修改2 | 0.2d | 2018-12-05 19:00 | 2018-12-05 20:00 | 96, 83 |  |  |
| 85 |  | 编写用例文档 | 0.4d | 2018-11-09 19:00 A | 2018-11-10 20:00 A |  | 100% |  |
| 86 |  | 绘制范围可视化表示--特性树 | 0.4d | 2018-11-12 19:00 A | 2018-11-13 20:00 A | 82, 85 | 100% |  |
| 87 |  | 绘制范围可视化表示--关联图 | 0.6d | 2018-11-12 19:00 A | 2018-11-14 20:00 A | 82 | 100% |  |
| 88 |  | 绘制范围可视化表示--生态系统图 | 0.4d | 2018-11-13 19:00 A | 2018-11-14 20:00 A | 82 | 100% |  |
| 89 |  | 绘制范围可视化表示--事件列表 | 0.2d | 2018-11-16 19:00 A | 2018-11-16 20:00 A | 82, 87, 88 | 100% |  |
| 90 |  | 界面初步设计1 | 0.2d | 2018-11-16 19:00 A | 2018-11-16 20:00 A | 85 | 100% |  |
| 91 |  | 界面初步设计2 | 0.4d | 2018-11-19 19:00 A | 2018-11-20 20:00 A | 90 | 100% |  |
| 92 |  | 发送访谈邀请函 | 0.2d | 2018-11-23 19:00 A | 2018-11-23 20:00 A | 91, 82, 86, 87, 88, 89, 85 | 100% |  |
| 93 |  | 需求获取访谈1 | 0.2d | 2018-11-25 09:00 A | 2018-11-25 10:00 A | 92 | 100% |  |
| 94 |  | web端的界面原型 | 0.4d | 2018-11-26 19:30 A | 2018-11-28 19:30 A | 93 | 100% |  |
| 95 |  | 发送访谈2邀请函 | 0.2d | 2018-12-02 19:00 A | 2018-12-02 20:00 A | 94 | 100% |  |
| 96 |  | 需求访谈2 | 0.2d | 2018-12-04 19:00 A | 2018-12-04 20:00 A | 95, 94 | 100% |  |
| 97 |  | web端的界面原型修改 | 0.4d | 2018-12-07 19:00 A | 2018-12-08 20:00 A | 96 | 100% |  |
| 98 |  | 需求访谈3 | 0.2d | 2018-12-10 19:00 | 2018-12-10 20:00 | 84, 97 |  |  |
| 99 |  | 用例图绘制1 | 0.6d | 2018-12-10 19:00 | 2018-12-12 20:00 | 96 |  |  |
| 100 |  | 用例图绘制2 | 0.4d | 2018-12-14 19:00 | 2018-12-15 20:00 | 99 |  |  |
| 101 |  | 修改界面原型1 | 0.6d | 2018-12-10 19:00 | 2018-12-12 20:00 | 96 |  |  |
| 102 |  | 修改界面原型2 | 0.4d | 2018-12-14 19:00 | 2018-12-15 20:00 | 101 |  |  |
| 103 |  | 制作问卷调查1 | 0.6d | 2018-12-10 19:00 | 2018-12-12 20:00 | 96 |  |  |
| 104 |  | 发放问卷调查2 | 0.4d | 2018-12-14 19:00 | 2018-12-15 20:00 | 103 |  |  |
| 105 |  | 检查问题报告1 | 0.6d | 2018-12-10 19:00 | 2018-12-12 20:00 | 96 |  |  |
| 106 |  | 检查问题报告2 | 0.4d | 2018-12-14 19:00 | 2018-12-15 20:00 | 105 |  |  |
| 107 |  | 召开应用程序开发联系会议 | 0.2d | 2018-12-16 08:00 A | 2018-12-16 09:00 | 106, 100, 102, 104, 98 |  |  |
| 108 |  | 需求重用 | 0.8d | 2018-12-17 17:00 | 2018-12-17 21:00 | 107 |  |  |
| 109 | 1.4.2 | **需求分析** | 9d | 2018-12-03 08:00 | 2018-12-28 20:00 | 76 |  |  |
| 110 |  | 创建开发原型 | 0.2d | 2018-12-18 19:00 | 2018-12-18 20:00 | 108 |  |  |
| 111 |  | 分析可行性1 | 0.4d | 2018-12-18 19:00 | 2018-12-19 20:00 | 108 |  |  |
| 112 |  | 分析可行性2 | 0.4d | 2018-12-21 19:00 | 2018-12-22 20:00 | 111 |  |  |
| 113 |  | 确认需求优先级 | 0.4d | 2018-12-18 19:00 | 2018-12-19 20:00 | 108 |  |  |
| 114 |  | 确认需求优先级2 | 0.4d | 2018-12-21 19:00 | 2018-12-22 20:00 | 113 |  |  |
| 115 |  | 需求建模 | 0.4d | 2018-12-18 19:00 | 2018-12-19 20:00 | 108 |  |  |
| 116 |  | 需求建模2 | 0.4d | 2018-12-21 19:00 | 2018-12-22 20:00 | 115 |  |  |
| 117 |  | 编写数据字典 | 0.4d | 2018-12-18 19:00 | 2018-12-19 20:00 | 108 |  |  |
| 118 |  | 编写数据字典2 | 0.4d | 2018-12-21 19:00 | 2018-12-22 20:00 | 117 |  |  |
| 119 |  | 应用质量功能调配 | 0.6d | 2018-12-23 09:00 | 2018-12-23 12:00 | 110, 112, 114, 116, 118 |  |  |
| 120 | 1.4.3 | **需求规格说明** | 7.5d | 2018-12-01 19:00 | 2018-12-30 19:30 | 109 | 9% |  |
| 121 | 1.4.3.1 | **采用需求规格说明模板** | 0.8d | 2018-12-03 19:00 | 2018-12-05 20:00 |  | 25% |  |
| 122 |  | 《SRS》第1部分草稿 | 0.4d | 2018-12-07 19:00 A | 2018-12-08 20:00 |  | 25% |  |
| 123 |  | 《SRS》第2部分草稿 | 0.4d | 2018-12-07 19:00 A | 2018-12-08 20:00 |  | 25% |  |
| 124 |  | 《SRS》第3部分草稿 | 0.4d | 2018-12-07 19:00 A | 2018-12-08 20:00 |  | 25% |  |
| 125 |  | 《SRS》第4部分草稿 | 0.4d | 2018-12-07 19:00 A | 2018-12-08 20:00 |  | 25% |  |
| 126 |  | 指明需求来源 | 0.6d | 2018-12-24 19:00 | 2018-12-26 20:00 | 119 |  |  |
| 127 |  | 为每一项需求注上标号 | 0.6d | 2018-12-24 19:00 | 2018-12-26 20:00 | 119 |  |  |
| 128 |  | 记录业务规范 | 0.6d | 2018-12-24 19:00 | 2018-12-26 20:00 | 119 |  |  |
| 129 |  | 创建需求跟踪能力矩阵 | 0.6d | 2018-12-24 19:00 | 2018-12-26 20:00 | 119 |  |  |
| 130 |  | 初定需求规格说明书 | 0.4d | 2018-12-28 19:00 | 2018-12-29 20:00 | 122, 123, 124, 125, 126, 127, 128, 129 |  |  |
| 131 | 1.4.4 | **需求规格审核** | 6d | 2018-12-17 08:00 | 2018-12-31 20:00 | 120 |  |  |
| 132 |  | 审查并修订需求规格说明 | 0.8d | 2018-12-31 17:00 | 2018-12-31 21:00 | 130 |  |  |
| 133 |  | 编写测试用例 | 1.2d | 2019-01-01 17:00 | 2019-01-01 23:00 | 132 |  |  |
| 134 |  | 修订测试用例 | 0.6d | 2019-01-02 17:00 | 2019-01-02 20:00 | 133, 132 |  |  |
| 135 |  | 编写用户手册 | 1.2d | 2019-01-01 17:00 | 2019-01-01 23:00 | 132 |  |  |
| 136 |  | 修订用户手册 | 0.2d | 2019-01-02 20:00 | 2019-01-02 21:00 | 135, 132 |  |  |
| 137 | 1.4.5 | **需求管理** | 9d | 2018-12-24 09:00 | 2019-01-04 11:00 |  |  |  |
| 138 |  | 建立变更控制委员会 | 0.4d | 2019-01-03 18:00 | 2019-01-03 20:00 |  |  |  |
| 139 |  | 编写需求文档的基准版本和控制版本 | 1.4d | 2019-01-04 16:00 | 2019-01-04 23:00 | 138 |  |  |
| 140 |  | 编写《需求变更控制文档》 | 1.4d | 2019-01-05 16:00 | 2019-01-05 23:00 | 138 |  |  |

| ID | WBS | Task | Duration | Start | Finish | Predecessors | Complete | Total float | Constraint |
| --- | --- | --- | --- | --- | --- | --- | --- | --- | --- |
| 141 | 1.5 | **项目控制** | 10.9d | 2018-11-09 19:00 | 2018-12-16 20:00 | 75 | 63% |  |  |
| 142 | 1.5.1 | **团建** | 0.1d | 2018-10-07 19:00 A | 2018-10-07 20:00 A |  | 100% |  |  |
| 143 |  | 第一次团建 | 0.2d | 2018-10-07 19:00 A | 2018-10-07 20:00 A | 3 | 100% |  |  |
| 144 | 1.5.2 | **小组例会** | 23.8d | 2018-09-27 19:00 A | 2019-01-04 20:00 |  | 76% |  |  |
| 145 |  | G12-第1次例会（常规） | 0.1d | 2018-09-27 19:00 A | 2018-09-28 19:30 A |  | 100% |  |  |
| 146 |  | G12-第2次例会（常规） | 0.1d | 2018-10-11 19:00 A | 2018-10-11 19:30 A | 145 | 100% |  |  |
| 147 |  | G12-第3次例会（常规） | 0.1d | 2018-10-18 19:00 A | 2018-10-18 19:30 A | 146 | 100% |  |  |
| 148 |  | G12-第4次例会（常规） | 0.1d | 2018-10-25 19:00 A | 2018-10-25 19:30 A | 147 | 100% |  |  |
| 149 |  | G12-第5次例会（常规） | 0.1d | 2018-11-01 19:00 A | 2018-11-01 19:30 A | 148 | 100% |  |  |
| 150 |  | G12-第6次例会（常规） | 0.1d | 2018-11-08 19:00 A | 2018-11-15 19:30 A | 149 | 100% |  | start no earlier than 2018-11-08 19:00 |
| 151 |  | G12-第7次例会（常规） | 0.1d | 2018-11-15 19:00 A | 2018-11-15 19:30 A | 150 | 100% |  |  |
| 152 |  | G12-第8次例会（临时） | 0.2d | 2018-11-19 13:00 A | 2018-11-19 14:00 A | 151 | 100% |  |  |
| 153 |  | G12-第9次例会（常规） | 0.1d | 2018-11-22 19:00 A | 2018-11-22 19:30 A | 152 | 100% |  |  |
| 154 |  | G12-第10次例会（常规） | 0.1d | 2018-11-29 19:00 A | 2018-11-29 19:30 A | 153 | 100% |  |  |
| 155 |  | G12-第11次例会（临时） | 0.4d | 2018-12-01 10:00 A | 2018-12-01 20:00 A | 154 | 100% |  |  |
| 156 |  | G12-第12次例会（常规） | 0.1d | 2018-12-06 19:00 A | 2018-12-06 19:30 A | 155 | 100% |  |  |
| 157 |  | G12-第13次例会（常规） | 0.2d | 2018-12-13 19:00 A | 2018-12-13 20:00 A | 156 | 100% |  |  |
| 158 |  | G12-第14次例会（常规） | 0.1d | 2018-12-20 19:00 A | 2018-12-20 19:30 A | 157 | 100% |  |  |
| 159 |  | G12-第15次例会（常规） | 0.2d | 2018-12-27 19:00 | 2018-12-27 20:00 | 158 |  |  |  |
| 160 |  | G12-第16次例会（常规） | 0.4d | 2019-01-07 18:00 | 2019-01-07 20:00 | 159 |  |  |  |
| 161 | 1.5.3 | **过程评审** | 20.1d | 2018-11-11 11:00 A | 2019-01-09 22:00 |  | 27% | 0d |  |
| 162 | 1.5.3.1 | **需求工程项目计划评审** | 11.5d | 2018-11-11 11:00 | 2018-12-13 11:00 |  | 60% |  |  |
| 163 |  | 需求计划评审第一次 | 0.3d | 2018-11-29 15:00 A | 2018-11-29 16:30 A | 51, 68, 73 | 100% |  |  |
| 164 |  | 需求计划评审（重评） | 0.2d | 2018-12-12 19:00 | 2018-12-12 20:00 | 163, 69, 74, 156, 53 |  |  |  |
| 165 |  | 需求规格说明文档评审 | 0.4d | 2019-01-06 18:00 | 2019-01-06 20:00 | 132, 134, 136 |  |  | start no earlier than 2019-01-06 18:00 |
| 166 |  | 需求变更控制文档评审 | 0.2d | 2019-01-09 21:00 | 2019-01-09 22:00 | 139, 140 |  |  |  |
| 167 | 1.6 | **项目收尾** | 10.2d | 2018-12-21 19:00 | 2019-01-10 20:00 | 141 |  |  |  |
| 168 |  | 整合已完成文档 | 0.6d | 2019-01-10 19:00 | 2019-01-10 22:00 | 165, 166, 164 |  |  |  |
| 169 |  | 编写项目总结报告 | 0.6d | 2019-01-11 19:00 | 2019-01-11 22:00 | 168 |  |  |  |
| 170 |  | 制作项目总结报告PPT-1 | 0.4d | 2019-01-12 19:00 | 2019-01-12 21:00 | 169 |  |  |  |
| 171 |  | 最终评审 | 0.2d | 2019-01-13 19:00 | 2019-01-13 20:00 | 170 |  |  |  |
| 172 |  | 按评审要求修改需提交的文档并提交 | 0.2d | 2019-01-14 19:00 | 2019-01-14 20:00 | 171 |  |  |  |
| 173 |  | 散伙饭 | 0.6d | 2019-01-15 18:00 | 2019-01-15 21:00 | 172 |  |  |  |

## Version 2 (data date 2018-10-30, saved 2019-01-16)

Last finish 2019-01-16 → 2019-06-08 (+143d). Complete tasks 93 → 206.

Added:

| ID | Task | Duration | Start | Finish | Predecessors | Constraint | Resources |
| --- | --- | --- | --- | --- | --- | --- | --- |
| 46 | PPT第一部分及汇总和审核 | 0.2d | 2018-12-21 19:00 A | 2018-12-23 09:30 A | 47, 49, 48, 50 | start no earlier than 2018-12-21 19:00 | 陈铭阳 |
| 47 | PPT第二部分 | 0.2d | 2018-12-19 19:00 A | 2018-12-19 20:00 A |  | start no earlier than 2018-12-19 19:00 | 刘祺 |
| 48 | PPT第三部分 | 0.2d | 2018-12-19 19:00 A | 2018-12-31 20:30 A |  |  | 蓝舒雯 |
| 50 | PPT第五部分 | 0.2d | 2018-12-20 19:00 A | 2018-12-20 20:00 A |  |  | 赵唯皓 |
| 74 | 第六次需求工程计划修订 | 0.2d | 2018-12-12 19:00 A | 2018-12-12 20:00 A | 73 |  | 刘祺 |
| 80 | 《项目章程》修订3 | 0.2d | 2018-12-12 19:00 A | 2018-12-12 20:00 A | 79 |  | 赵佳锋 |
| 88 | 汇总初步愿景与范围文档 | 0.2d | 2018-11-10 19:00 A | 2018-11-10 20:00 A | 85, 86, 87 |  | 刘祺 |
| 89 | **修改愿景与范围文档** | 3.6d | 2018-11-12 19:00 A | 2018-11-29 16:00 A | 88 |  |  |
| 96 | 用户群分类 | 0.2d | 2018-11-13 19:00 A | 2018-11-13 20:00 A | 88 |  | 赵佳锋 |
| 101 | 发送教师访谈邀请函 | 0.2d | 2018-12-01 19:00 A | 2018-12-01 20:00 A | 100 |  |  |
| 102 | 管理员访谈及界面确认 | 0.2d | 2018-12-22 18:00 A | 2018-12-22 19:00 A | 100 |  | 陈铭阳; 蓝舒雯; 刘祺; 赵佳锋; 赵唯皓 |
| 107 | 发送教师访谈邀请函 | 0.2d | 2018-12-17 19:00 A | 2018-12-17 20:00 A | 101 |  | 刘祺 |
| 108 | 教师界面确认 | 0.2d | 2018-12-19 19:00 A | 2018-12-19 20:00 A | 107 |  | 陈铭阳; 蓝舒雯; 刘祺; 赵佳锋; 赵唯皓 |
| 109 | 管理员界面确认2 | 0.2d | 2018-12-27 19:00 A | 2018-12-27 20:00 A | 102 |  | 陈铭阳; 蓝舒雯; 刘祺; 赵佳锋; 赵唯皓 |
| 110 | 学生访谈及界面确认 | 0.4d | 2019-01-04 18:00 A | 2019-01-04 20:00 A | 100, 106 |  | 陈铭阳; 赵佳锋 |
| 111 | 教师界面确认 | 0.2d | 2019-01-05 19:00 A | 2019-01-05 20:00 A | 108 |  | 陈铭阳; 蓝舒雯; 刘祺; 赵佳锋; 赵唯皓 |
| 112 | JAD会议各成员邀请函发放 | 0.2d | 2019-01-05 20:00 A | 2019-01-05 21:00 A | 109, 108, 110, 111 |  | 刘祺 |
| 119 | web端的界面原型修改 | 0.4d | 2018-12-23 19:00 A | 2018-12-24 20:00 A | 118 |  | 陈铭阳 |
| 120 | web端的界面原型修改 | 0.4d | 2019-01-01 19:00 A | 2019-01-01 21:00 A | 119 |  | 赵唯皓 |
| 121 | app端的界面原型制作 | 0.4d | 2018-12-28 19:00 A | 2018-12-29 20:00 A | 120 |  | 赵唯皓 |
| 122 | app端的界面原型制作 | 1d | 2019-01-01 08:00 A | 2019-01-01 13:00 A | 121 |  | 陈铭阳 |
| 123 | 管理员的web端界面原型 | 0.8d | 2018-12-17 17:00 A | 2018-12-17 21:00 A | 100 |  | 蓝舒雯 |
| 124 | 管理员的web端界面原型 | 0.6d | 2018-12-24 19:00 A | 2018-12-26 20:00 A | 123 |  | 蓝舒雯 |
| 125 | 管理员的web端界面原型修改 | 0.4d | 2018-12-28 19:00 A | 2018-12-29 20:00 A | 124 |  | 蓝舒雯 |
| 126 | **分析需求可行性** | 0d | 2019-01-08 19:00 A | 2019-01-08 19:00 A |  |  |  |
| 128 | **QFD打分表制作及发放** | 0.8d | 2018-12-22 19:30 | 2018-12-24 19:30 |  |  |  |
| 131 | QFD打分表制作及发送（游客） | 0.2d | 2019-01-09 19:00 A | 2019-01-09 20:00 A | 113, 127 |  | 陈铭阳 |
| 132 | QFD打分表制作及发送（学生） | 0.2d | 2019-01-09 19:00 A | 2019-01-09 20:00 A | 131, 113, 127 |  | 赵佳锋 |
| 133 | QFD打分表整合 | 0.2d | 2019-01-10 20:00 A | 2019-01-10 21:00 A | 129, 130, 131, 132 |  | 刘祺 |
| 134 | 计算需求优先级 | 0.2d | 2019-01-11 19:00 A | 2019-01-11 20:00 A | 133 |  | 赵唯皓 |
| 135 | **编写数据字典** | 0.4d | 2018-12-18 19:00 A | 2018-12-19 20:00 |  |  |  |
| 141 | SRS第一章内容 | 0.2d | 2018-12-17 20:00 A | 2018-12-17 21:00 A | 140 |  | 刘祺 |
| 142 | 识别需求来源 | 0.2d | 2018-12-17 19:00 A | 2018-12-17 20:00 A | 140 |  | 赵佳锋 |
| 143 | 需求唯一编号 | 0.2d | 2018-12-17 18:00 A | 2018-12-17 19:00 A | 140 |  | 赵唯皓 |
| 145 | **《SRS》编写第一版本** | 3.2d | 2018-12-16 08:00 A | 2018-12-23 12:00 A | 139 |  |  |
| 146 | **编写功能需求1** | 1.6d | 2018-12-18 18:00 A | 2018-12-23 11:00 | 139 |  |  |
| 147 | 游客功能需求 | 1d | 2018-12-18 19:00 A | 2018-12-22 20:00 A | 142, 143, 144 | start no earlier than 2018-12-18 19:00 | 刘祺 [80%] |
| 148 | 教师功能需求 | 1d | 2018-12-18 19:00 A | 2018-12-22 20:00 A | 142, 143, 144 |  | 赵唯皓 |
| 149 | 学生功能需求 | 1d | 2018-12-18 18:00 A | 2018-12-21 20:00 A | 142, 143, 144 |  | 赵佳锋 |
| 150 | 管理员功能需求 | 1d | 2018-12-18 18:00 A | 2018-12-21 20:00 A | 142, 143, 144 |  | 蓝舒雯 |
| 151 | 描述非功能性需求 | 0.6d | 2018-12-18 18:00 A | 2018-12-19 20:00 A | 140 |  | 刘祺 |
| 152 | 用例图修改 | 1d | 2018-12-16 08:00 A | 2018-12-17 18:00 A | 104 |  | 赵佳锋; 赵唯皓; 蓝舒雯 |
| 153 | 活动图 | 2d | 2018-12-17 19:00 A | 2018-12-23 12:00 A | 140 |  | 蓝舒雯; 赵佳锋; 赵唯皓 |
| 154 | 继续编写SRS文档剩余部分 | 1d | 2018-12-21 19:00 A | 2018-12-23 12:00 A | 141 |  | 刘祺 |
| 155 | **《SRS》编写第二版本** | 2.2d | 2018-12-24 18:00 A | 2019-01-01 18:00 A | 145 |  |  |
| 156 | **编写功能需求2** | 1d | 2018-12-24 18:00 A | 2018-12-28 20:00 A | 146 |  |  |
| 157 | 游客功能需求 | 1d | 2018-12-24 19:00 A | 2018-12-28 20:00 A | 147 |  | 刘祺 |
| 158 | 教师功能需求 | 1d | 2018-12-24 18:00 A | 2018-12-27 20:00 A | 148 |  | 赵唯皓 |
| 159 | 学生功能需求 | 1d | 2018-12-24 19:00 A | 2018-12-28 20:00 A | 149 |  | 赵佳锋 |
| 160 | 管理员功能需求 | 1d | 2018-12-24 18:00 A | 2018-12-27 20:00 A | 150 |  | 蓝舒雯 |
| 161 | 描述非功能性需求 | 0.4d | 2018-12-24 19:00 A | 2018-12-25 20:00 A | 151 |  | 刘祺 |
| 162 | 对话框图 | 1.8d | 2018-12-26 19:00 A | 2019-01-01 18:00 A |  |  | 蓝舒雯; 赵佳锋; 赵唯皓 |
| 163 | 继续编写SRS文档剩余部分 | 1d | 2018-12-26 19:00 A | 2018-12-31 18:00 A | 154 |  | 刘祺 |
| 164 | **《SRS》编写第三版本** | 36d | 2019-01-01 18:00 A | 2019-06-08 20:00 A | 155 |  |  |
| 165 | **修改功能需求** | 9.4d | 2019-01-01 18:00 A | 2019-01-13 11:00 A | 156 |  |  |
| 166 | 游客功能需求 | 1d | 2019-01-01 18:00 A | 2019-01-01 23:00 A | 157 |  | 陈铭阳 |
| 167 | 教师功能需求 | 1d | 2019-01-11 19:00 A | 2019-01-12 20:00 A | 158 |  | 赵唯皓 |
| 168 | 学生功能需求 | 1d | 2019-01-11 20:00 A | 2019-01-12 21:00 A | 159 |  | 赵佳锋 |
| 169 | 管理员功能需求 | 1d | 2019-01-12 19:00 A | 2019-01-13 11:00 A | 160 |  | 蓝舒雯 |
| 170 | 修改非功能性需求 | 1d | 2019-06-04 19:00 A | 2019-06-08 20:00 A | 161 |  | 刘祺 |
| 171 | 修改各种图 | 1d | 2019-01-12 19:00 A | 2019-01-13 11:00 A | 152, 162, 153 |  | 陈铭阳 |
| 172 | 修改SRS文档其余部分 | 1d | 2019-01-28 19:00 A | 2019-02-01 20:00 A | 163 |  | 陈铭阳 |
| 174 | 《需求规格说明书》评审后修改确认发布版本1 | 1d | 2019-02-06 19:00 A | 2019-02-11 20:00 A | 173 |  | 刘祺 |
| 177 | 编写游客测试用例 | 1d | 2018-12-28 19:30 A | 2018-12-31 20:30 A | 137 |  | 陈铭阳 |
| 178 | 编写教师测试用例 | 1d | 2018-12-28 19:30 A | 2018-12-31 20:30 A | 137 |  | 赵唯皓 |
| 179 | 编写学生测试用例 | 1d | 2018-12-28 19:30 A | 2018-12-31 20:30 A | 137 |  | 赵佳锋 |
| 180 | 编写管理员测试用例 | 1d | 2018-12-31 20:30 A | 2019-01-01 21:30 A | 137 |  | 蓝舒雯 |
| 181 | 整合测试用例 | 1d | 2019-01-06 19:00 A | 2019-01-09 20:00 A | 177, 178, 179, 180 |  | 刘祺 |
| 183 | 修改游客测试用例 | 1d | 2019-01-01 19:30 A | 2019-01-02 18:30 A | 181 |  | 陈铭阳 |
| 184 | 修改教师测试用例 | 1d | 2019-01-01 19:30 A | 2019-01-02 18:30 A | 181 |  | 赵唯皓 |
| 185 | 修改学生测试用例 | 1d | 2019-01-01 19:30 A | 2019-01-02 18:30 A | 181 |  | 赵佳锋 |
| 186 | 修改管理员测试用例 | 1d | 2019-01-01 21:30 A | 2019-01-02 20:30 A | 181 |  | 蓝舒雯 |
| 188 | **编写用户手册** | 0.2d | 2019-01-02 20:00 | 2019-01-02 21:00 | 187 |  |  |
| 189 | 编写游客用户手册 | 1d | 2018-12-28 19:30 A | 2018-12-31 20:30 A | 137 |  | 刘祺 |
| 190 | 编写教师用户手册 | 1d | 2019-01-01 19:30 A | 2019-01-02 18:30 A | 137 |  | 刘祺 |
| 191 | 编写学生用户手册 | 1d | 2019-01-02 18:30 A | 2019-01-03 19:30 A | 137 |  | 刘祺 |
| 192 | 编写管理员用户手册 | 1d | 2019-01-03 19:30 A | 2019-01-04 19:30 A | 137 |  | 刘祺 |
| 193 | 整合用户手册 | 1d | 2018-12-29 19:30 A | 2019-01-01 17:30 A | 189, 190, 191, 192 |  | 赵唯皓 |
| 195 | 编写游客用户手册 | 1d | 2019-01-02 18:30 A | 2019-01-03 19:30 A | 193 |  | 陈铭阳 |
| 196 | 编写教师用户手册 | 1d | 2019-01-03 19:30 A | 2019-01-04 19:30 A | 193 |  | 赵唯皓 |
| 197 | 编写学生用户手册 | 1d | 2019-02-28 19:00 A | 2019-03-05 20:00 A | 193 |  | 赵佳锋 |
| 198 | 编写管理员用户手册 | 1d | 2019-01-02 20:30 A | 2019-01-04 16:30 A | 193 |  | 蓝舒雯 |
| 199 | 整合修订后的用户手册 | 1d | 2019-05-13 19:00 A | 2019-05-17 20:00 A | 195, 196, 197, 198 |  | 刘祺 |
| 201 | **需求管理工具使用** | 2d | 2019-01-07 18:00 A | 2019-01-11 20:00 A | 100 |  |  |
| 202 | 选择安装需求管理工具 | 0.8d | 2019-01-07 18:00 A | 2019-01-09 20:00 A | 100 |  | 陈铭阳 |
| 203 | 学习使用并导入需求 | 0.4d | 2019-01-08 19:00 A | 2019-01-08 21:00 A | 202 |  | 陈铭阳 |
| 204 | 进行需求的跟踪记录 | 0.6d | 2019-01-09 19:00 A | 2019-01-10 20:00 A | 203 |  | 陈铭阳 |
| 205 | 导出需求相关数据 | 1d | 2019-01-10 19:00 A | 2019-01-11 20:00 A | 204 |  | 陈铭阳 |
| 206 | **需求变更管理** | 4.8d | 2019-01-07 19:00 A | 2019-01-15 19:00 A | 240 |  |  |
| 208 | 编写CCB章程 | 0.6d | 2019-01-07 19:00 A | 2019-01-10 19:00 A | 207 |  | 赵佳锋; 赵唯皓 |
| 209 | 递交变更申请书 | 1d | 2019-01-08 19:00 A | 2019-01-10 21:00 A | 208 |  | 刘祺 |
| 210 | CCB会议 | 1d | 2019-01-09 19:00 A | 2019-01-10 22:00 A | 209, 205, 201 |  |  |
| 211 | 需求变更文档编写 | 1d | 2019-01-10 19:00 A | 2019-01-11 20:00 A | 210 |  | 刘祺 |
| 212 | 变更任务安排 | 1d | 2019-01-11 19:00 A | 2019-01-12 20:00 A | 211 |  | 刘祺 |
| 213 | 需求变更管理阶段组内评审 | 0.2d | 2019-01-12 19:00 A | 2019-01-12 20:00 A | 212 |  | 陈铭阳; 蓝舒雯; 刘祺; 赵佳锋; 赵唯皓 |
| 217 | 第二次团建 | 0.2d | 2018-12-16 19:00 A | 2018-12-16 20:00 A | 216 |  | 陈铭阳; 蓝舒雯; 刘祺; 赵佳锋; 赵唯皓 |
| 235 | G12-第17次例会（常规） | 0.8d | 2019-01-10 19:00 A | 2019-01-16 20:00 A | 234 |  | 陈铭阳; 蓝舒雯; 刘祺; 赵佳锋; 赵唯皓 |
| 242 | **计划** | 6.4d | 2019-01-03 19:30 A | 2019-01-12 20:30 A |  |  |  |
| 243 | 系统设计与实现计划 | 2d | 2019-01-03 19:30 A | 2019-01-05 23:00 A | 240 |  | 赵佳锋; 赵唯皓 |
| 244 | 软件概要设计 | 1d | 2019-01-06 19:00 A | 2019-01-09 20:00 A | 243 |  | 赵佳锋 |
| 245 | 部署计划 | 1d | 2019-01-11 10:00 A | 2019-01-11 15:00 A | 244 |  | 赵唯皓 |
| 246 | 测试计划 | 1d | 2019-01-11 10:00 A | 2019-01-11 15:00 A | 244 |  | 蓝舒雯 |
| 247 | 维护计划 | 1d | 2019-01-11 19:30 A | 2019-01-12 20:30 A | 244 |  | 陈铭阳 |
| 248 | 培训计划 | 1d | 2019-01-11 09:30 A | 2019-01-11 14:30 A | 244 |  | 刘祺 |

Removed: 82 汇总并修改愿景与范围文档; 85 编写用例文档; 94 web端的界面原型; 98 需求访谈3; 101 修改界面原型1; 102 修改界面原型2; 105 检查问题报告1; 106 检查问题报告2; 108 需求重用; 112 分析可行性2; 115 需求建模; 116 需求建模2; 119 应用质量功能调配; 123 《SRS》第2部分草稿; 124 《SRS》第3部分草稿; 125 《SRS》第4部分草稿; 126 指明需求来源; 127 为每一项需求注上标号; 129 创建需求跟踪能力矩阵; 132 审查并修订需求规格说明; 139 编写需求文档的基准版本和控制版本; 140 编写《需求变更控制文档》; 170 制作项目总结报告PPT-1

Changed:

| ID | Task | Start | Finish | Duration | Complete | Total float | Predecessors | Other |
| --- | --- | --- | --- | --- | --- | --- | --- | --- |
| 1 | **软件工程系列课程教学辅助网站-需求工程项目** |  | 2019-01-16 17:00 → 2019-01-16 20:00 | 37d → 35.8d | 45% → 99% |  |  |  |
| 2 | **项目启动** |  |  |  | 88% → 100% |  |  |  |
| 4 | 项目任务书下达 |  | 2018-09-20 20:00 A → 2018-09-21 20:00 A (+1d) |  |  |  |  |  |
| 5 | 安装配置管理工具初步 |  | 2018-09-24 20:00 A |  | 67% → 100% |  |  |  |
| 7 | **知识储备** |  |  | 18.9d → 19.3d | 60% → 100% |  |  |  |
| 10 | PPT 第5部分 |  | 2018-10-10 20:00 A → 2018-10-11 20:00 A (+1d) |  |  |  |  |  |
| 11 | PPT 第6部分 |  | 2018-10-10 20:00 A → 2018-10-11 20:00 A (+1d) |  |  |  |  |  |
| 12 | PPT 第7部分 |  | 2018-10-09 20:00 A → 2018-10-10 20:00 A (+1d) |  |  |  |  |  |
| 14 | 整合制成PPt |  | 2018-10-12 20:00 A → 2018-10-13 19:30 A (+1d) |  |  |  |  |  |
| 16 | **UML工具** |  |  |  | 88% → 100% |  |  |  |
| 18 | PPT 2-5部分资料收集 |  | 2018-10-17 20:00 A |  | 0% → 100% |  |  |  |
| 31 | 修改翻转pptUML基础1 |  | 2018-10-29 20:00 A → 2018-10-29 19:00 A |  |  |  |  |  |
| 45 | **UML基础4** |  |  | 5.2d → 5.6d | 0% → 100% |  |  |  |
| 49 | PPT第四部分 | 2018-12-10 08:00 → 2018-12-20 19:00 A (+10d) | 2018-12-21 20:00 → 2018-12-20 20:00 A (-1d) | 5.8d → 0.2d | 0% → 100% |  |  | was named 制作ppt; resources none → 赵佳锋 |
| 59 | 找寻《项目计划》模板 |  |  |  |  |  | none → 4 |  |
| 62 | 制定《需求工程项目计划》第二部分 |  | 2018-10-07 18:30 A → 2018-10-07 18:30 |  |  |  |  |  |
| 63 | 修订《需求工程项目计划》 |  | 2018-09-29 20:00 A → 2018-10-07 19:00 A (+8d) |  |  |  |  |  |
| 76 | 《项目章程模板》寻找 |  |  |  |  |  | none → 4 |  |
| 81 | **项目执行** |  |  |  | 24% → 100% |  |  |  |
| 82 | **需求获取** |  |  | 14.3d → 14.7d | 53% → 100% |  |  |  |
| 83 | **定义及初步编写项目视图与范围** |  |  |  | 90% → 100% |  |  | was named 定义及编写项目视图与范围 |
| 84 | 寻找愿景和范围文档模板 |  |  |  |  |  | none → 64 |  |
| 90 | 绘制范围可视化表示--特性树 |  | 2018-11-13 20:00 A → 2018-11-14 20:00 A (+1d) |  |  |  | 汇总并修改愿景与范围文档, 编写用例文档 → 88 | resources 赵佳锋 → 陈铭阳 |
| 91 | 绘制范围可视化表示--关联图 |  |  |  |  |  | 汇总并修改愿景与范围文档 → 88 |  |
| 92 | 绘制范围可视化表示--生态系统图 |  |  |  |  |  | 汇总并修改愿景与范围文档 → 88 |  |
| 93 | 绘制范围可视化表示--事件列表 |  |  |  |  |  | 汇总并修改愿景与范围文档, 91, 92 → 90, 91, 92 |  |
| 94 | 愿景与范围文档修改1 | 2018-11-19 19:00 A → 2018-11-28 19:00 A (+9d) | 2018-11-19 20:00 A → 2018-11-28 20:00 A (+9d) |  |  |  | 汇总并修改愿景与范围文档 → 93 | resources 刘祺 → 赵佳锋 |
| 95 | 愿景与范围文档修改2 | 2018-12-05 19:00 → 2018-11-29 15:00 A (-6d) | 2018-12-05 20:00 → 2018-11-29 16:00 A (-6d) |  | 0% → 100% |  | 100, 94 → 94 | resources 赵佳锋 → 刘祺 |
| 97 | 发送客户访谈邀请函 | 2018-11-23 19:00 A → 2018-11-21 19:00 A (-2d) | 2018-11-23 20:00 A → 2018-11-21 20:00 A (-2d) |  |  |  | 117, 汇总并修改愿景与范围文档, 90, 91, 92, 93, 编写用例文档 → 88, 96 | was named 发送访谈邀请函 |
| 98 | 客户需求获取访谈 | 2018-11-25 09:00 A → 2018-12-04 09:00 A (+9d) | 2018-11-25 10:00 A → 2018-12-04 10:00 A (+9d) |  |  |  |  | was named 需求获取访谈1 |
| 99 | 发送客户访谈邀请函2 |  |  |  |  |  | web端的界面原型 → 98 | was named 发送访谈2邀请函 |
| 100 | 客户确认愿景与范围文档 | 2018-12-04 19:00 A → 2018-12-19 19:00 A (+15d) | 2018-12-04 20:00 A → 2018-12-19 20:00 A (+15d) |  |  |  | 99, web端的界面原型 → 99 | was named 需求访谈2 |
| 103 | 用例图绘制1 | 2018-12-10 19:00 A | 2018-12-12 20:00 → 2018-12-12 10:00 A |  | 0% → 100% |  |  |  |
| 104 | 用例图绘制2 | 2018-12-14 19:00 A | 2018-12-15 20:00 A |  | 0% → 100% |  |  |  |
| 105 | 制作问卷调查1 | 2018-12-10 19:00 A | 2018-12-12 20:00 → 2018-12-12 10:00 A |  | 0% → 100% |  |  |  |
| 106 | 发放问卷调查2 | 2018-12-14 19:00 A | 2018-12-15 20:00 A |  | 0% → 100% |  |  |  |
| 113 | 召开应用程序开发联系会议 | 2018-12-16 08:00 A → 2019-01-07 18:00 A (+22d) | 2018-12-16 09:00 → 2019-01-07 20:00 A (+22d) | 0.2d → 0.4d | 0% → 100% |  | 检查问题报告2, 104, 修改界面原型2, 106, 需求访谈3 → 112 |  |
| 114 | **需求分析** |  |  | 9d → 9.4d | 0% → 100% |  |  |  |
| 115 | **界面原型制作及更改** |  | 2018-12-18 20:00 → 2018-12-19 20:00 (+1d) | 0.2d → 0.4d | 0% → 100% |  | 需求重用 → none | was named 创建开发原型; resources 陈铭阳 → none |
| 116 | 界面初步设计1 |  | 2018-11-16 20:00 A → 2018-11-26 19:30 A (+10d) |  |  |  | 编写用例文档 → 98 |  |
| 118 | web端的界面原型修改 | 2018-12-07 19:00 A → 2018-11-26 19:30 A (-11d) | 2018-12-08 20:00 A → 2018-11-28 19:30 A (-10d) |  |  |  | 100 → 117 |  |
| 127 | 分析需求可行性 | 2018-12-18 19:00 → 2019-01-08 19:00 A (+21d) | 2018-12-19 20:00 → 2019-01-08 19:00 A (+20d) | 0.4d → 0d | 0% → 100% |  | 需求重用 → 113 | was named 分析可行性1 |
| 129 | QFD打分表制作及发送（教师） | 2018-12-18 19:00 → 2019-01-07 19:00 A (+20d) | 2018-12-19 20:00 → 2019-01-07 20:00 A (+19d) | 0.4d → 0.2d | 0% → 100% |  | 需求重用 → 113, 127 | was named 确认需求优先级; resources 刘祺 → 赵唯皓 |
| 130 | QFD打分表制作及发送（管理员） | 2018-12-21 19:00 → 2019-01-09 19:00 A (+19d) | 2018-12-22 20:00 → 2019-01-09 20:00 A (+18d) | 0.4d → 0.2d | 0% → 100% |  | 129 → 113, 127 | was named 确认需求优先级2; resources 刘祺 → 蓝舒雯 |
| 136 | 编写数据字典 | 2018-12-18 19:00 A | 2018-12-19 20:00 → 2018-12-25 20:00 A (+6d) |  | 0% → 100% |  | 需求重用 → none |  |
| 137 | 修订数据字典 | 2018-12-21 19:00 A | 2018-12-22 20:00 → 2018-12-27 20:00 A (+5d) |  | 0% → 100% |  |  | was named 编写数据字典2 |
| 138 | **需求规格说明** |  |  | 7.5d → 7.9d | 9% → 100% |  |  |  |
| 139 | **采用需求规格说明模板** | 2018-12-03 19:00 → 2018-12-15 19:00 A (+12d) | 2018-12-05 20:00 → 2018-12-18 11:00 (+13d) | 0.8d → 4d | 25% → 100% |  |  |  |
| 140 | 查找需求规格说明书编写规范 | 2018-12-07 19:00 A → 2018-12-15 19:00 A (+8d) | 2018-12-08 20:00 → 2018-12-20 20:00 A (+12d) | 0.4d → 0.2d | 25% → 100% |  | none → 100 | was named 《SRS》第1部分草稿 |
| 144 | 记录业务规范 | 2018-12-24 19:00 → 2018-12-17 18:00 A (-7d) | 2018-12-26 20:00 → 2018-12-17 19:00 A (-9d) | 0.6d → 0.2d | 0% → 100% |  | 应用质量功能调配 → 140 | resources 赵佳锋 → 刘祺 |
| 173 | 初定需求规格说明书 | 2018-12-28 19:00 → 2019-01-11 20:00 A (+14d) | 2018-12-29 20:00 → 2019-02-08 20:00 A (+41d) | 0.4d → 2d | 0% → 100% |  | 140, 《SRS》第2部分草稿, 《SRS》第3部分草稿, 《SRS》第4部分草稿, 指明需求来源, 为每一项需求注上标号, 144, 创建需求跟踪能力矩阵 → 166, 167, 168, 169, 170, 171, 172, 134, 164, 165 |  |
| 175 | **需求规格审核** |  |  |  | 0% → 100% |  |  |  |
| 176 | **编写测试用例** |  |  |  | 0% → 100% |  | 审查并修订需求规格说明 → 137 | resources 陈铭阳; 刘祺 → none |
| 182 | **修订测试用例** |  |  |  | 0% → 100% |  | 176, 审查并修订需求规格说明 → 176 | resources 蓝舒雯 → none |
| 187 | 整合修订后的测试用例 | 2019-01-01 17:00 → 2019-02-14 19:00 A (+44d) | 2019-01-01 23:00 → 2019-02-23 20:00 A (+53d) | 1.2d → 1.8d | 0% → 100% |  | 审查并修订需求规格说明 → 183, 184, 185, 186 | was named 编写用户手册 |
| 194 | **修订用户手册** |  |  |  | 0% → 100% |  | 187, 审查并修订需求规格说明 → 187 | resources 蓝舒雯 → none |
| 200 | **需求管理** |  |  |  | 0% → 100% |  | none → 100 |  |
| 207 | 建立变更控制委员会 | 2019-01-03 18:00 → 2019-01-07 19:30 A (+4d) | 2019-01-03 20:00 → 2019-01-15 19:00 A (+12d) | 0.4d → 1.6d | 0% → 100% |  | none → 240 |  |
| 214 | **项目控制** |  |  | 10.9d → 11.3d | 63% → 100% |  | 81 → none |  |
| 215 | **团建** | 2018-10-07 19:00 A → 2018-10-12 19:00 A (+5d) | 2018-10-07 20:00 A → 2018-12-16 20:00 A (+70d) | 0.1d → 14.5d |  |  |  |  |
| 216 | 第一次团建 | 2018-10-07 19:00 A → 2018-10-12 19:00 A (+5d) | 2018-10-07 20:00 A → 2018-10-12 20:00 A (+5d) |  |  |  |  |  |
| 218 | **小组例会** |  |  | 23.8d → 24.2d | 76% → 100% |  |  |  |
| 219 | G12-第1次例会（常规） |  | 2018-09-28 19:30 A → 2018-10-07 19:30 A (+9d) | 0.1d → 0.2d |  |  |  |  |
| 220 | G12-第2次例会（常规） |  | 2018-10-11 19:30 A → 2018-10-12 19:30 A (+1d) |  |  |  |  |  |
| 225 | G12-第7次例会（常规） |  | 2018-11-15 19:30 A → 2018-11-15 20:00 A |  |  |  |  |  |
| 232 | G12-第14次例会（常规） |  | 2018-12-20 19:30 A → 2018-12-28 19:30 A (+8d) |  |  |  |  |  |
| 233 | G12-第15次例会（常规） | 2018-12-27 19:00 → 2018-12-27 19:30 A | 2018-12-27 20:00 → 2018-12-31 19:30 A (+4d) | 0.2d → 0.4d | 0% → 100% |  |  |  |
| 234 | G12-第16次例会（常规） | 2019-01-07 18:00 → 2019-01-03 17:30 A (-4d) | 2019-01-07 20:00 → 2019-01-04 18:30 A (-3d) | 0.4d → 0.8d | 0% → 100% |  |  | resources none → 陈铭阳; 蓝舒雯; 刘祺; 赵佳锋; 赵唯皓 |
| 236 | **过程评审** | 2018-11-11 11:00 A → 2018-11-11 11:00 | 2019-01-09 22:00 → 2019-01-11 20:00 A (+2d) | 20.1d → 21.7d | 27% → 100% | 0d → none |  |  |
| 237 | **需求工程项目计划评审** |  |  | 11.5d → 11.9d | 60% → 100% |  |  |  |

| ID | Task | Start | Finish | Duration | Complete | Predecessors | Other |
| --- | --- | --- | --- | --- | --- | --- | --- |
| 239 | 需求计划评审（重评） | 2018-12-12 19:00 → 2018-12-12 09:00 A | 2018-12-12 20:00 → 2018-12-12 11:00 A | 0.2d → 0.4d | 0% → 100% |  |  |
| 240 | 需求规格说明文档评审 | 2019-01-06 18:00 → 2019-01-02 21:30 A (-4d) | 2019-01-06 20:00 → 2019-01-03 19:30 A (-3d) |  | 0% → 100% | 审查并修订需求规格说明, 182, 194 → 182, 194, 188, 199, 237 |  |
| 241 | 需求变更控制文档评审 | 2019-01-09 21:00 → 2019-01-11 19:00 A (+2d) | 2019-01-09 22:00 → 2019-01-11 20:00 A (+2d) |  | 0% → 100% | 编写需求文档的基准版本和控制版本, 编写《需求变更控制文档》 → 213, 175, 206 |  |
| 249 | **项目收尾** |  |  |  | 0% → 64% | 214 → none |  |
| 250 | 整合已完成文档 | 2019-01-10 19:00 → 2019-01-12 18:00 A (+2d) | 2019-01-10 22:00 → 2019-01-12 21:00 A (+2d) |  | 0% → 100% | 240, 241, 239 → 240, 241, 239, 74, 57, 80, 245, 246, 247, 248, 174, 89, 95, 122, 125 |  |
| 251 | 项目总结报告 | 2019-01-11 19:00 → 2019-01-13 13:00 A (+2d) | 2019-01-11 22:00 → 2019-01-13 17:00 A (+2d) | 0.6d → 0.8d | 0% → 100% |  | was named 编写项目总结报告; resources none → 陈铭阳 |
| 252 | 最终评审 | 2019-01-13 19:00 → 2019-01-16 11:00 A (+3d) | 2019-01-13 20:00 → 2019-01-16 12:00 (+3d) |  |  | 制作项目总结报告PPT-1 → 251 |  |
| 253 | 按评审要求修改需提交的文档并提交 | 2019-01-14 19:00 → 2019-01-17 18:00 A (+3d) | 2019-01-14 20:00 → 2019-01-17 20:00 (+3d) | 0.2d → 0.4d |  |  |  |
| 254 | 散伙饭 | 2019-01-15 18:00 → 2019-01-19 19:00 A (+4d) | 2019-01-15 21:00 → 2019-01-19 20:00 (+4d) | 0.6d → 0.2d |  |  |  |

## Version 3 (data date 2018-10-30, saved 2019-01-16)

Note of the change: 甘特图更新

Last finish stays 2019-06-08. Complete tasks 206 → 207.

Added:

| ID | Task | Duration | Start | Finish | Resources |
| --- | --- | --- | --- | --- | --- |
| 252 | 文档改进和ppt完善 | 0.6d | 2019-01-14 19:00 A | 2019-01-15 20:00 A | 陈铭阳; 蓝舒雯; 刘祺; 赵佳锋; 赵唯皓 |

Changed:

| ID | Task | Start | Finish | Duration | Complete |
| --- | --- | --- | --- | --- | --- |
| 232 | G12-第14次例会（常规） |  | 2018-12-28 19:30 A → 2018-12-20 20:00 A (-8d) | 0.1d → 0.2d |  |
| 233 | G12-第15次例会（常规） | 2018-12-27 19:30 A → 2018-12-27 19:00 A | 2018-12-31 19:30 A → 2018-12-27 20:00 A (-4d) | 0.4d → 0.2d |  |
| 234 | G12-第16次例会（常规） | 2019-01-03 17:30 A → 2019-01-03 19:00 A | 2019-01-04 18:30 A → 2019-01-03 20:00 A (-1d) | 0.8d → 0.2d |  |
| 235 | G12-第17次例会（常规） |  | 2019-01-16 20:00 A → 2019-01-10 20:00 A (-6d) | 0.8d → 0.2d |  |
| 249 | **项目收尾** |  |  |  | 64% → 71% |

## Version 4 (data date 2018-10-30, saved 2019-01-16)

Note of the change: Update PRD2018-G12-甘特图.mpp

Last finish 2019-06-08 → 2019-01-19 (-140d). Complete tasks 207 → 204.

Changed:

| ID | Task | Start | Finish | Duration | Complete | Total float |
| --- | --- | --- | --- | --- | --- | --- |
| 51 | **项目计划** |  | 2018-10-28 20:00 → 2018-12-12 20:00 A (+45d) | 5.3d → 15.4d |  |  |
| 81 | **项目执行** |  |  |  | 100% → 99% |  |
| 138 | **需求规格说明** |  |  |  | 100% → 99% |  |
| 164 | **《SRS》编写第三版本** |  | 2019-06-08 20:00 A → 2019-01-02 19:00 A (-157d) | 36d → 1.4d |  |  |
| 165 | **修改功能需求** |  | 2019-01-13 11:00 A → 2019-01-02 19:00 A (-11d) | 9.4d → 1.4d |  |  |
| 167 | 教师功能需求 | 2019-01-11 19:00 A → 2019-01-01 19:00 A (-10d) | 2019-01-12 20:00 A → 2019-01-02 18:00 A (-10d) |  |  |  |
| 168 | 学生功能需求 | 2019-01-11 20:00 A → 2019-01-01 20:00 A (-10d) | 2019-01-12 21:00 A → 2019-01-02 19:00 A (-10d) |  |  |  |
| 169 | 管理员功能需求 | 2019-01-12 19:00 A → 2019-01-01 19:00 A (-11d) | 2019-01-13 11:00 A → 2019-01-02 18:00 A (-11d) |  |  |  |
| 170 | 修改非功能性需求 | 2019-06-04 19:00 A → 2019-01-01 19:00 A (-154d) | 2019-06-08 20:00 A → 2019-01-02 18:00 A (-157d) |  |  |  |
| 171 | 修改各种图 | 2019-01-12 19:00 A → 2019-01-01 19:00 A (-11d) | 2019-01-13 11:00 A → 2019-01-02 18:00 A (-11d) |  |  |  |
| 172 | 修改SRS文档其余部分 | 2019-01-28 19:00 A → 2019-01-01 19:00 A (-27d) | 2019-02-01 20:00 A → 2019-01-02 18:00 A (-30d) |  |  |  |
| 173 | 初定需求规格说明书 | 2019-01-11 20:00 A → 2019-01-04 19:00 A (-7d) | 2019-02-08 20:00 A → 2019-01-04 20:00 (-35d) | 2d → 0.2d | 100% → 0% |  |
| 174 | 《需求规格说明书》评审后修改确认发布版本1 | 2019-02-06 19:00 A → 2019-01-11 19:00 A (-26d) | 2019-02-11 20:00 A → 2019-01-11 20:00 A (-31d) | 1d → 0.2d |  |  |
| 175 | **需求规格审核** |  |  |  | 100% → 99% |  |
| 180 | 编写管理员测试用例 | 2018-12-31 20:30 A → 2018-12-28 20:30 A (-3d) | 2019-01-01 21:30 A → 2018-12-31 17:30 A (-1d) |  |  |  |
| 181 | 整合测试用例 | 2019-01-06 19:00 A → 2019-01-01 19:00 A (-5d) | 2019-01-09 20:00 A → 2019-01-02 18:00 A (-7d) |  |  |  |
| 182 | **修订测试用例** |  |  |  | 100% → 95% |  |
| 183 | 修改游客测试用例 | 2019-01-01 19:30 A → 2019-01-04 19:30 A (+3d) | 2019-01-02 18:30 A → 2019-01-05 17:30 A (+3d) |  |  |  |
| 184 | 修改教师测试用例 | 2019-01-01 19:30 A → 2019-01-04 19:30 A (+3d) | 2019-01-02 18:30 A → 2019-01-05 17:30 A (+3d) |  |  |  |
| 185 | 修改学生测试用例 | 2019-01-01 19:30 A → 2019-01-04 19:30 A (+3d) | 2019-01-02 18:30 A → 2019-01-05 17:30 A (+3d) |  |  |  |
| 186 | 修改管理员测试用例 | 2019-01-01 21:30 A → 2019-01-04 21:30 A (+3d) | 2019-01-02 20:30 A → 2019-01-05 19:30 A (+3d) |  |  |  |
| 187 | 整合修订后的测试用例 | 2019-02-14 19:00 A → 2019-01-06 19:00 A (-39d) | 2019-02-23 20:00 A → 2019-01-06 20:00 (-48d) | 1.8d → 0.2d | 100% → 0% |  |
| 190 | 编写教师用户手册 | 2019-01-01 19:30 A → 2018-12-28 19:30 A (-4d) | 2019-01-02 18:30 A → 2018-12-31 20:30 A (-2d) |  |  |  |
| 191 | 编写学生用户手册 | 2019-01-02 18:30 A → 2018-12-28 18:30 A (-5d) | 2019-01-03 19:30 A → 2018-12-31 19:30 A (-3d) |  |  |  |
| 192 | 编写管理员用户手册 | 2019-01-03 19:30 A → 2018-12-28 19:30 A (-6d) | 2019-01-04 19:30 A → 2018-12-31 20:30 A (-4d) |  |  |  |
| 193 | 整合用户手册 | 2018-12-29 19:30 A → 2019-01-01 19:30 A (+3d) | 2019-01-01 17:30 A → 2019-01-02 18:30 A (+1d) |  |  |  |
| 197 | 编写学生用户手册 | 2019-02-28 19:00 A → 2019-01-02 19:00 A (-57d) | 2019-03-05 20:00 A → 2019-01-03 20:00 A (-61d) |  |  |  |
| 199 | 整合修订后的用户手册 | 2019-05-13 19:00 A → 2019-01-06 19:00 A (-127d) | 2019-05-17 20:00 A → 2019-01-09 20:00 A (-128d) |  |  |  |
| 200 | **需求管理** | 2018-12-24 09:00 → 2019-01-07 09:00 (+14d) | 2019-01-04 11:00 → 2019-01-13 20:00 (+9d) | 9d → 7d | 100% → 99% |  |
| 206 | **需求变更管理** |  | 2019-01-15 19:00 A → 2019-01-12 20:00 (-3d) | 4.8d → 2.6d | 100% → 99% | none → 0d |
| 207 | 建立变更控制委员会 | 2019-01-07 19:30 A → 2019-01-08 19:00 A (+1d) | 2019-01-15 19:00 A → 2019-01-08 20:00 (-7d) | 1.6d → 0.2d | 100% → 99% |  |
| 214 | **项目控制** | 2018-11-09 19:00 → 2018-10-12 19:00 (-28d) | 2018-12-16 20:00 → 2019-01-12 20:00 (+27d) | 11.3d → 27.7d |  |  |
| 249 | **项目收尾** | 2018-12-21 19:00 → 2019-01-12 19:00 (+22d) | 2019-01-10 20:00 → 2019-01-19 20:00 (+9d) | 10.2d → 3.6d |  |  |
