# PRD2018-G12-需求工程计划

How a schedule from MS Project changed from version to version. A marks actual dates.

## Version 1 (data date 2018-10-30, saved 2018-11-29, file 甘特图.mpp)

| ID | WBS | Task | Duration | Start | Finish | Predecessors | Complete | Constraint |
| --- | --- | --- | --- | --- | --- | --- | --- | --- |
| 1 | * | **软件工程系列课程教学辅助网站-需求工程项目** | 26.6d | 2018-09-19 08:00 | 2019-01-16 17:00 |  | 44% |  |
| 2 | *.1 | **项目启动** | 1d | 2018-09-19 19:00 A | 2018-09-23 20:00 |  | 100% |  |
| 3 |  | 确定小组人员并成立G12小组 | 0.4d | 2018-09-19 19:00 A | 2018-09-20 20:00 A |  | 100% |  |
| 4 |  | 项目任务书下达 | 0.2d | 2018-09-20 19:00 A | 2018-09-20 20:00 A | 3 | 100% |  |
| 5 |  | 安装配置管理工具 | 0.4d | 2018-09-21 19:00 A | 2018-09-22 20:00 A | 4 | 100% |  |
| 6 |  | logo设计 | 0.4d | 2018-09-21 19:00 A | 2018-09-22 20:00 A | 4 | 100% |  |
| 7 | 1.2 | **知识储备** | 16d | 2018-10-08 19:00 A | 2018-12-23 20:00 |  | 36% |  |
| 8 | 1.2.1 | **UML概述** | 1.4d | 2018-10-08 19:00 A | 2018-10-14 20:00 |  | 100% |  |
| 9 |  | PPT1-4部分 | 0.2d | 2018-10-08 19:00 A | 2018-10-10 20:00 A |  | 100% |  |
| 10 |  | PPT 第5部分 | 0.6d | 2018-10-08 19:00 A | 2018-10-10 20:00 A |  | 100% |  |
| 11 |  | PPT 第6部分 | 0.6d | 2018-10-08 19:00 A | 2018-10-10 20:00 A |  | 100% |  |
| 12 |  | PPT 第7部分 | 0d | 2018-10-08 19:00 A | 2018-10-10 19:00 |  | 100% |  |
| 13 |  | PPT第8部分 | 0.4d | 2018-10-09 19:00 A | 2018-10-10 20:00 A |  | 100% |  |
| 14 |  | 整合制成PPt | 0d | 2018-10-12 19:00 A | 2018-10-12 20:00 | 9, 10, 11, 12, 13 | 100% |  |
| 15 |  | 审核检查 | 0d | 2018-10-13 19:00 A | 2018-10-13 19:00 A | 14 | 100% |  |
| 16 | 1.2.2 | **UML工具** | 1.4d | 2018-10-15 19:00 A | 2018-10-21 20:00 | 8 | 100% |  |
| 17 |  | PPT 第1部分资料收集 | 0.4d | 2018-10-15 19:00 A | 2018-10-16 20:00 A |  | 100% |  |
| 18 |  | PPT 2-5部分资料收集 | 0d | 2018-10-15 19:00 A | 2018-10-16 20:00 | 17FF, 20FF, 21FF, 22FF | 100% |  |
| 19 |  | PPT资料整合及审核 | 0.2d | 2018-10-20 19:00 A | 2018-10-20 20:00 A | 18, 17, 20, 21, 22 | 100% |  |
| 20 |  | PPT 第6部分资料收集 | 0d | 2018-10-15 19:00 A | 2018-10-16 19:00 |  | 100% |  |
| 21 |  | PPT 第7部分资料收集 | 0d | 2018-10-15 19:00 A | 2018-10-16 19:00 |  | 100% |  |
| 22 |  | PPT 第8部分资料收集 | 0.4d | 2018-10-15 19:00 A | 2018-10-16 20:00 A |  | 100% |  |
| 23 | 1.2.3 | **UML基础1** | 1.4d | 2018-10-22 19:00 A | 2018-10-28 20:00 | 16 | 100% |  |
| 24 |  | PPT 第2部分 | 0d | 2018-10-22 19:00 A | 2018-10-23 20:00 A |  | 100% |  |
| 25 |  | PPT 第3部分 | 0.2d | 2018-10-22 19:00 A | 2018-10-22 20:00 A |  | 100% |  |
| 26 |  | PPT 第4部分 | 0.2d | 2018-10-22 19:00 A | 2018-10-23 19:00 |  | 100% |  |
| 27 |  | PPT 第7部分 | 0.4d | 2018-10-22 19:00 A | 2018-10-23 20:00 A |  | 100% |  |
| 28 |  | PPT 1、5、6、8、9部分 | 0.2d | 2018-10-23 19:00 A | 2018-10-23 20:00 A |  | 100% |  |
| 29 |  | PPT整合及审核 | 0.2d | 2018-10-26 19:00 A | 2018-10-26 20:00 A | 28, 24, 25, 26, 27 | 100% |  |
| 30 | 1.2.4 | **UML基础2** | 1.4d | 2018-10-29 19:00 A | 2018-11-04 20:00 | 23 | 100% |  |
| 31 |  | 修改翻转pptUML基础1 | 0d | 2018-10-29 19:00 A | 2018-10-29 20:00 A | 28 | 100% |  |
| 32 |  | 「原型的定义和动机」部分 | 0.2d | 2018-10-30 19:00 A | 2018-10-30 20:00 A | 31 | 100% |  |
| 33 |  | 「原型成功的因素」和「原型界面介绍」部分PPt资料 | 0.4d | 2018-10-30 19:00 A | 2018-10-31 20:00 A | 31 | 100% |  |
| 34 |  | 「原型风险」部分 | 0.4d | 2018-10-30 19:00 A | 2018-10-31 20:00 A | 31 | 100% |  |
| 35 |  | 「原型的使用和评估」部分 | 0d | 2018-10-30 19:00 A | 2018-10-31 20:00 A | 31 | 100% |  |
| 36 |  | 「原型的未来用途和形式」和「Axure RP的界面和使用」部分 | 0d | 2018-10-30 19:00 A | 2018-10-31 20:00 A | 31 | 100% |  |
| 37 |  | PPT整合 | 0d | 2018-11-02 19:00 A | 2018-11-02 20:00 A | 32, 33, 34, 35, 36 | 100% |  |
| 38 |  | PPt小组内审核及修改 | 0d | 2018-11-03 19:00 A | 2018-11-03 20:00 A | 37 | 100% |  |
| 39 | 1.2.5 | **UML基础3** | 6.8d | 2018-12-03 08:00 | 2018-12-09 17:00 | 30 |  |  |
| 40 |  | 赶制ppt | 4d | 2018-12-03 08:00 | 2018-12-12 20:00 |  |  |  |
| 41 | 1.2.6 | **UML基础4** | 6.8d | 2018-12-10 08:00 | 2018-12-16 17:00 | 39 |  |  |
| 42 |  | 制作ppt | 5.8d | 2018-12-10 08:00 | 2018-12-26 11:00 |  |  |  |
| 43 | 1.3 | **项目计划** | 5d | 2018-09-24 19:00 A | 2018-10-28 20:00 | 2 | 96% |  |
| 44 | 1.3.1 | **《可行性分析报告》编写和修订** | 1.4d | 2018-09-24 19:00 A | 2018-09-30 20:00 |  | 100% |  |
| 45 |  | 寻找《可行性分析报告》模板 | 0.2d | 2018-09-24 19:00 A | 2018-09-24 20:00 A |  | 100% |  |
| 46 |  | 编写《可行性分析报告》 | 0.4d | 2018-09-25 19:00 A | 2018-09-26 20:00 A | 45 | 100% |  |
| 47 |  | 《可行性分析报告》的组内审查修订 | 0.4d | 2018-09-28 19:00 A | 2018-09-29 20:00 A | 46 | 100% |  |
| 48 | 1.3.2 | **《需求工程项目计划》的编写和修订** | 1.4d | 2018-09-24 19:00 A | 2018-09-30 20:00 |  | 92% |  |
| 49 |  | 找寻《项目计划》模板 | 0.2d | 2018-09-24 19:00 A | 2018-09-24 20:00 A |  | 100% |  |
| 50 |  | WBS、OBS的绘制 | 0.2d | 2018-09-25 19:00 A | 2018-09-26 20:00 A | 49 | 100% | start no earlier than 2018-09-25 19:00 |
| 51 |  | 制定《需求工程项目计划》第一部分 | 0.2d | 2018-09-28 19:00 A | 2018-09-28 20:00 A | 49 | 100% |  |
| 52 |  | 制定《需求工程项目计划》第二部分 | 0d | 2018-09-25 19:00 A | 2018-09-26 20:00 A | 49 | 100% |  |
| 53 |  | 修订《需求工程项目计划》 | 0.2d | 2018-09-29 19:00 A | 2018-09-29 20:00 A | 51, 52 | 100% |  |
| 54 |  | 第一次修订需求工程计划 | 0.2d | 2018-11-02 19:00 A | 2018-11-02 20:00 A | 53 | 100% |  |
| 55 |  | 审核第一次修订后的需求工程计划 | 0.2d | 2018-11-03 19:00 A | 2018-11-03 20:00 A | 54 | 100% |  |
| 56 |  | 第二次修订需求工程计划 | 0.2d | 2018-11-09 19:00 A | 2018-11-12 20:00 A | 55 | 100% |  |
| 57 |  | 审核第二次修订后的需求工程计划 | 0.2d | 2018-11-10 19:00 A | 2018-11-12 20:00 A | 56 | 100% |  |
| 58 |  | 第三次修订需求工程计划 | 0.2d | 2018-11-16 19:00 A | 2018-11-16 20:00 A | 57 | 100% |  |
| 59 |  | 审核第三次修订后的需求工程计划 | 0.2d | 2018-11-17 19:00 A | 2018-11-17 20:00 A | 58 | 100% |  |
| 60 |  | 修订WBS | 0.2d | 2018-11-16 19:00 A | 2018-11-16 20:00 A | 50 | 100% |  |
| 61 |  | 修订OBS | 0.2d | 2018-11-17 19:00 A | 2018-11-17 20:00 A | 50 | 100% |  |
| 62 |  | 第四次修改需求工程计划 | 0.2d | 2018-11-24 19:00 | 2018-11-24 20:00 | 59, 60, 61 |  |  |
| 63 | 1.3.3 | **《项目章程》编写和审查** | 1.4d | 2018-10-15 19:00 | 2018-10-21 20:00 |  | 100% |  |
| 64 |  | 《项目章程模板》寻找 | 0.2d | 2018-10-16 19:00 A | 2018-10-16 20:00 A |  | 100% |  |
| 65 |  | 制定《项目章程》 | 0.2d | 2018-10-16 19:00 A | 2018-10-16 20:00 A | 64 | 100% |  |
| 66 |  | 《项目章程》审核修订 | 0.2d | 2018-10-20 19:00 A | 2018-10-20 20:00 A | 65 | 100% |  |
| 67 | 1.3.4 | **《QA计划》编写和组内审核** | 1.4d | 2018-10-22 19:00 A | 2018-10-28 20:00 |  | 100% |  |
| 68 |  | 寻找《QA计划》模板 | 0.2d | 2018-10-22 19:00 A | 2018-10-22 20:00 A |  | 100% |  |
| 69 |  | 编写《QA计划》第1部分 | 0.4d | 2018-10-23 19:00 A | 2018-10-24 20:00 A | 68 | 100% |  |
| 70 |  | 编写《QA计划》第1部分 | 0.2d | 2018-10-26 19:00 A | 2018-10-26 20:00 A | 68 | 100% |  |

| ID | WBS | Task | Duration | Start | Finish | Predecessors | Complete | Total float | Constraint |
| --- | --- | --- | --- | --- | --- | --- | --- | --- | --- |
| 71 |  | 编写《QA计划》第2部分 | 0d | 2018-10-23 19:00 A | 2018-10-24 19:00 | 68 | 100% |  |  |
| 72 |  | 编写《QA计划》第3部分 | 0.4d | 2018-10-23 19:00 A | 2018-10-24 20:00 A | 68 | 100% |  |  |
| 73 |  | 《QA计划》组内审核 | 0.2d | 2018-10-27 19:00 A | 2018-10-27 20:00 A | 68, 69, 70, 71, 72 | 100% |  |  |
| 74 | *.3 | **项目执行** | 5.6d | 2018-11-05 19:00 A | 2018-12-03 20:00 | 43 | 33% |  |  |
| 75 | 1.4.1 | **需求获取** | 1.4d | 2018-11-05 19:00 A | 2018-11-11 20:00 |  | 82% |  |  |
| 76 | *.3.3 | **定义及编写项目视图与范围** | 0.4d | 2018-11-05 19:00 A | 2018-11-06 20:00 |  | 100% |  |  |
| 77 |  | 寻找愿景和范围文档模板 | 0.2d | 2018-11-05 19:00 A | 2018-11-05 20:00 A |  | 100% |  |  |
| 78 |  | 愿景和范围文档第一部分 | 0.2d | 2018-11-06 19:00 A | 2018-11-06 20:00 A | 77 | 100% |  |  |
| 79 |  | 愿景和范围文档第二部分 | 0.4d | 2018-11-06 19:00 A | 2018-11-09 20:00 A | 77 | 100% |  |  |
| 80 |  | 愿景和范围文档第三部分 | 0.4d | 2018-11-06 19:00 A | 2018-11-07 20:00 A | 77 | 100% |  |  |
| 81 |  | 编写用例文档 | 0.4d | 2018-11-09 19:00 A | 2018-11-10 20:00 A |  | 100% |  |  |
| 82 |  | 汇总并修改愿景与范围文档 | 0.4d | 2018-11-12 19:00 A | 2018-11-13 20:00 A | 78, 79, 80 | 100% |  | start no earlier than 2018-11-12 10:00 |
| 83 |  | 绘制范围可视化表示--特性树 | 0.4d | 2018-11-12 19:00 A | 2018-11-13 20:00 A | 81, 82 | 100% |  |  |
| 84 |  | 绘制范围可视化表示--关联图 | 0.6d | 2018-11-12 19:00 A | 2018-11-14 20:00 A | 82 | 100% |  |  |
| 85 |  | 绘制范围可视化表示--生态系统图 | 0.4d | 2018-11-13 19:00 A | 2018-11-14 20:00 A | 82 | 100% |  |  |
| 86 |  | 绘制范围可视化表示--事件列表 | 0.2d | 2018-11-16 19:00 A | 2018-11-16 20:00 A | 82, 84, 85 | 100% |  |  |
| 87 |  | 界面初步设计1 | 0.2d | 2018-11-16 19:00 A | 2018-11-17 19:00 | 81 | 100% |  |  |
| 88 |  | 界面初步设计2 | 0.4d | 2018-11-19 19:00 A | 2018-11-20 20:00 A | 87 | 100% |  |  |
| 89 |  | 发送访谈邀请函 | 0.2d | 2018-11-23 19:00 A | 2018-11-23 20:00 A | 88, 82, 81, 83, 84, 85, 86 | 100% |  |  |
| 90 |  | 需求获取访谈1 | 0.2d | 2018-11-25 09:00 A | 2018-11-25 10:00 A | 89 | 100% |  |  |
| 91 |  | 分析用户工作流程 | 0.2d | 2018-11-26 19:00 | 2018-11-26 20:00 | 81, 90 |  |  |  |
| 92 |  | 检查问题报告 | 0.2d | 2018-11-27 19:00 | 2018-11-27 20:00 | 91 |  |  |  |
| 93 |  | 召开应用程序开发联系会议 | 0.2d | 2018-11-28 19:00 A | 2018-11-28 20:00 | 92 |  |  |  |
| 94 |  | 需求重用 | 0.4d | 2018-11-30 19:00 | 2018-12-01 20:00 | 93 |  |  |  |
| 95 | 1.4.2 | **需求分析** | 7.6d | 2018-12-03 08:00 | 2018-12-28 20:00 | 75 |  |  |  |
| 96 |  | 创建开发原型 | 0.4d | 2018-12-03 19:00 | 2018-12-04 20:00 | 94 |  |  |  |
| 97 |  | 分析可行性 | 0.2d | 2018-12-04 19:00 | 2018-12-04 20:00 | 96FF |  |  |  |
| 98 |  | 确认需求优先级 | 0.2d | 2018-12-05 19:00 | 2018-12-05 20:00 | 97 |  |  |  |
| 99 |  | 需求建模 | 0.4d | 2018-12-07 19:00 | 2018-12-08 20:00 | 98 |  |  |  |
| 100 |  | 编写数据字典 | 0.4d | 2018-12-07 19:00 | 2018-12-08 20:00 | 99SS |  |  |  |
| 101 |  | 应用质量功能调配 | 0.4d | 2018-12-08 19:00 | 2018-12-10 20:00 | 100, 99 |  |  |  |
| 102 | 1.4.3 | **需求规格说明** | 1.2d | 2018-12-10 19:00 | 2018-12-15 20:00 | 95 |  |  |  |
| 103 |  | 采用需求规格说明模板 | 0.2d | 2018-12-10 19:00 | 2018-12-10 20:00 |  |  |  |  |
| 104 |  | 指明需求来源 | 0.4d | 2018-12-11 19:00 | 2018-12-12 20:00 | 103 |  |  |  |
| 105 |  | 为每一项需求注上标号 | 0.2d | 2018-12-14 19:00 | 2018-12-14 20:00 | 104FF |  |  |  |
| 106 |  | 记录业务规范 | 0.4d | 2018-12-11 19:00 | 2018-12-12 20:00 | 103 |  |  |  |
| 107 |  | 创建需求跟踪能力矩阵 | 0.4d | 2018-12-11 19:00 | 2018-12-12 20:00 | 103 |  |  |  |
| 108 |  | 创建需求跟踪能力矩阵 | 0.2d | 2018-12-13 19:00 | 2018-12-13 20:00 | 107 |  |  |  |
| 109 |  | 初定需求规格说明书 | 0.4d | 2018-12-14 19:00 | 2018-12-15 20:00 | 103, 104, 105, 106, 107FF |  |  |  |
| 110 | 1.4.4 | **需求规格审核** | 3.4d | 2018-12-17 08:00 | 2018-12-22 20:00 | 102 |  |  |  |
| 111 |  | 审查需求规格说明 | 0.6d | 2018-12-17 19:00 | 2018-12-19 20:00 | 109 |  |  |  |
| 112 |  | 编写测试用例 | 0.6d | 2018-12-17 19:00 | 2018-12-19 20:00 |  |  |  |  |
| 113 |  | 修订测试用例 | 0.2d | 2018-12-21 19:00 | 2018-12-21 20:00 | 112, 111 |  |  |  |
| 114 |  | 编写用户手册 | 0.6d | 2018-12-17 19:00 | 2018-12-19 20:00 |  |  |  |  |
| 115 |  | 修订用户手册 | 0.2d | 2018-12-21 19:00 | 2018-12-21 20:00 | 114 |  |  |  |
| 116 |  | 修订需求规格说明书 | 0.2d | 2018-12-22 19:00 A | 2018-12-22 20:00 | 111, 113, 115 |  |  |  |
| 117 | 1.4.5 | **需求管理** | 1.8d | 2018-12-24 09:00 A | 2018-12-29 20:00 |  |  | 0d |  |
| 118 |  | 建立变更控制委员会 | 0.2d | 2018-12-24 09:00 | 2018-12-24 10:00 | 116 |  |  |  |
| 119 |  | 召开紧急会议确定变更控制过程 | 0.2d | 2018-12-25 19:00 A | 2018-12-25 20:00 | 118 |  |  |  |
| 120 |  | 分析变更影响 | 0.2d | 2018-12-26 19:00 A | 2018-12-26 20:00 | 119 |  |  |  |
| 121 |  | 跟踪每一项变更 | 0.2d | 2018-12-26 19:00 A | 2018-12-26 20:00 | 119 |  |  |  |
| 122 |  | 跟踪需求状态 | 0.2d | 2018-12-26 19:00 | 2018-12-26 20:00 | 119 |  |  |  |
| 123 |  | 编写需求文档的基准版本和控制版本 | 0.2d | 2018-12-28 19:00 | 2018-12-28 20:00 | 120, 121, 122 |  |  |  |
| 124 |  | 修订需求文档的基准版本和控制版本 | 0.2d | 2018-12-29 19:00 | 2018-12-29 20:00 | 123 |  |  |  |
| 125 |  | 编写《需求变更控制文档》 | 0.2d | 2018-12-28 19:00 | 2018-12-28 20:00 | 120, 121, 122 |  |  |  |
| 126 |  | 组内审核修订《需求变更控制文档》 | 0.2d | 2018-12-29 19:00 | 2018-12-29 20:00 | 125 |  |  |  |
| 127 | 1.5 | **项目控制** | 7.2d | 2018-11-09 19:00 | 2018-12-16 20:00 | 74 | 40% |  |  |
| 128 | 1.5.1 | **小组例会** | 16d | 2018-09-27 19:00 A | 2018-12-27 20:00 |  | 62% | 0d |  |
| 129 |  | G12-第1次例会（常规） | 0.2d | 2018-09-27 19:00 A | 2018-09-27 20:00 A |  | 100% |  |  |
| 130 |  | G12-第2次例会（常规） | 0.2d | 2018-10-11 19:00 A | 2018-10-11 20:00 A | 129 | 100% |  |  |
| 131 |  | G12-第3次例会（常规） | 0.2d | 2018-10-18 19:00 A | 2018-10-18 20:00 A | 130 | 100% |  |  |
| 132 |  | G12-第4次例会（常规） | 0.2d | 2018-10-25 19:00 A | 2018-10-25 20:00 A | 131 | 100% |  |  |
| 133 |  | G12-第5次例会（常规） | 0.2d | 2018-11-01 19:00 A | 2018-11-01 20:00 A | 132 | 100% |  |  |
| 134 |  | G12-第6次例会（常规） | 0.2d | 2018-11-08 19:00 A | 2018-11-08 20:00 A | 133 | 100% |  | start no earlier than 2018-11-08 19:00 |
| 135 |  | G12-第7次例会（常规） | 0.2d | 2018-11-19 19:00 A | 2018-11-19 20:00 A | 134 | 100% |  |  |
| 136 |  | G12-第8次例会（常规） | 0.2d | 2018-11-22 19:00 A | 2018-11-22 20:00 A | 135 | 100% |  |  |
| 137 |  | G12-第9次例会（常规） | 0.2d | 2018-11-29 19:00 A | 2018-11-29 20:00 | 136 |  |  |  |
| 138 |  | G12-第10次例会（常规） | 0.2d | 2018-12-06 19:00 | 2018-12-06 20:00 | 137 |  |  |  |
| 139 |  | G12-第11次例会（常规） | 0.2d | 2018-12-13 19:00 | 2018-12-13 20:00 | 138 |  |  |  |
| 140 |  | G12-第12次例会（常规） | 0.2d | 2018-12-20 19:00 | 2018-12-20 20:00 | 139 |  |  |  |

| ID | WBS | Task | Duration | Start | Finish | Predecessors | Total float | Constraint |
| --- | --- | --- | --- | --- | --- | --- | --- | --- |
| 141 |  | G12-第13次例会（常规） | 0.2d | 2018-12-27 19:00 | 2018-12-27 20:00 | 140 |  |  |
| 142 | 1.5.2 | **过程评审** | 9.4d | 2018-11-20 08:00 | 2019-01-02 11:00 |  | 0d |  |
| 143 |  | 需求工程项目计划评审 | 0.6d | 2018-11-20 08:00 | 2018-11-20 11:00 | 62 |  |  |
| 144 |  | 需求规格说明文档评审 | 0.2d | 2018-12-26 10:00 | 2018-12-26 11:00 | 116 | -2.4d | finish no earlier than 2018-12-26 11:00 |
| 145 |  | 需求变更控制文档评审 | 0.6d | 2019-01-02 08:00 | 2019-01-02 11:00 | 126 |  |  |
| 146 | 1.6 | **项目收尾** | 4.8d | 2018-12-21 19:00 | 2019-01-10 20:00 | 127 |  |  |
| 147 |  | 整合已完成文档 | 0.2d | 2019-01-03 19:00 | 2019-01-03 20:00 | 143, 144, 145 |  |  |
| 148 |  | 编写项目总结报告 | 0.4d | 2019-01-04 19:00 | 2019-01-05 20:00 | 147 |  |  |
| 149 |  | 制作项目总结报告PPT-1 | 0.2d | 2019-01-05 19:00 | 2019-01-05 20:00 | 148 |  |  |
| 150 |  | 制作项目总结报告PPT-2 | 0.4d | 2019-01-07 19:00 | 2019-01-08 20:00 | 148 |  |  |
| 151 |  | 最终评审 | 0.2d | 2019-01-09 08:00 | 2019-01-09 09:00 | 149, 150 |  |  |
| 152 |  | 按评审要求修改需提交的文档并提交 | 0.4d | 2019-01-10 19:00 | 2019-01-11 20:00 | 151 |  |  |
| 153 |  | 散伙饭 | 0.2d | 2019-01-12 19:00 | 2019-01-12 20:00 | 152 |  |  |

## Version 2 (data date 2018-10-30, saved 2018-12-11, file 重评甘特图.mpp)

Note of the change: 更新计划文档

Last finish stays 2019-01-16. Complete tasks 78 → 91.

Added:

| ID | Task | Duration | Start | Finish | Predecessors | Constraint | Resources |
| --- | --- | --- | --- | --- | --- | --- | --- |
| 40 | 搜集第一部分和第三部分资料 | 0.4d | 2018-12-03 19:00 A | 2018-12-04 18:00 A |  |  | 赵唯皓 |
| 41 | 搜集第二部分资料 | 0.4d | 2018-12-03 19:00 A | 2018-12-04 18:00 A |  |  | 赵佳锋 |
| 42 | PPT第一部分及汇总和审核 | 0.2d | 2018-12-05 19:00 A | 2018-12-05 20:00 A | 40FF, 41FF, 43FF, 44FF | start no earlier than 2018-12-05 19:00 | 陈铭阳 |
| 43 | PPT第二部分 | 0.2d | 2018-12-05 19:00 A | 2018-12-05 20:00 A |  | start no earlier than 2018-12-05 19:00 | 刘祺 |
| 52 | 《可行性分析报告》修订1 | 0.2d | 2018-11-30 19:00 A | 2018-11-30 20:00 A | 51 |  | 赵唯皓 |
| 53 | 《可行性分析报告》修订2 | 0.2d | 2018-12-02 19:00 A | 2018-12-02 20:00 A | 52 |  | 赵唯皓 |
| 69 | 第五次需求工程计划修订 | 0.6d | 2018-11-29 21:00 A | 2018-11-29 23:59 A | 68 |  | 刘祺 |
| 74 | 《项目章程》修订2 | 0.2d | 2018-11-30 19:00 A | 2018-11-30 20:00 A | 73 |  | 赵佳锋 |
| 83 | 愿景与范围文档修改1 | 0.2d | 2018-11-19 19:00 A | 2018-11-19 20:00 A | 82 |  | 刘祺 |
| 84 | 愿景与范围文档修改2 | 0.2d | 2018-12-05 19:00 | 2018-12-05 20:00 | 96, 83 |  | 赵佳锋 |
| 94 | web端的界面原型 | 0.4d | 2018-11-26 19:30 A | 2018-11-28 19:30 A | 93 |  | 陈铭阳 |
| 95 | 发送访谈2邀请函 | 0.2d | 2018-12-02 19:00 A | 2018-12-02 20:00 A | 94 |  | 蓝舒雯 |
| 96 | 需求访谈2 | 0.2d | 2018-12-04 19:00 A | 2018-12-04 20:00 A | 95, 94 |  | 赵佳锋; 蓝舒雯; 刘祺; 陈铭阳; 赵唯皓 |
| 97 | web端的界面原型修改 | 0.4d | 2018-12-07 19:00 A | 2018-12-08 20:00 A | 96 |  | 陈铭阳 |
| 98 | 需求访谈3 | 0.2d | 2018-11-05 19:00 | 2018-11-05 20:00 | 84, 97 |  | 赵佳锋; 蓝舒雯; 刘祺; 陈铭阳; 赵唯皓 |
| 99 | 用例图绘制1 | 0.6d | 2018-12-10 19:00 | 2018-12-12 20:00 | 96 |  | 赵佳锋 |
| 100 | 用例图绘制2 | 0.4d | 2018-12-14 19:00 | 2018-12-15 20:00 | 99 |  | 赵佳锋 |
| 101 | 修改界面原型1 | 0.6d | 2018-12-10 19:00 | 2018-12-12 20:00 | 96 |  | 赵唯皓 |
| 102 | 修改界面原型2 | 0.4d | 2018-12-14 19:00 | 2018-12-15 20:00 | 101 |  | 赵唯皓 |
| 103 | 制作问卷调查1 | 0.6d | 2018-12-10 19:00 | 2018-12-12 20:00 | 96 |  | 蓝舒雯 |
| 104 | 发放问卷调查2 | 0.4d | 2018-12-14 19:00 | 2018-12-15 20:00 | 103 |  | 蓝舒雯 |
| 106 | 检查问题报告2 | 0.4d | 2018-12-14 19:00 | 2018-12-15 20:00 | 105 |  | 刘祺 |
| 112 | 分析可行性2 | 0.4d | 2018-12-21 19:00 | 2018-12-22 20:00 | 111 |  | 赵唯皓 |
| 114 | 确认需求优先级2 | 0.4d | 2018-12-21 19:00 | 2018-12-22 20:00 | 113 |  | 刘祺 |
| 116 | 需求建模2 | 0.4d | 2018-12-21 19:00 | 2018-12-22 20:00 | 115 |  | 赵佳锋 |
| 118 | 编写数据字典2 | 0.4d | 2018-12-21 19:00 | 2018-12-22 20:00 | 117 |  | 蓝舒雯 |
| 122 | 《SRS》第1部分草稿 | 0.4d | 2018-12-07 19:00 A | 2018-12-08 20:00 |  |  | 刘祺 |
| 123 | 《SRS》第2部分草稿 | 0.4d | 2018-12-07 19:00 A | 2018-12-08 20:00 |  |  | 赵佳锋 |
| 124 | 《SRS》第3部分草稿 | 0.4d | 2018-12-07 19:00 A | 2018-12-08 20:00 |  |  | 赵唯皓 |
| 125 | 《SRS》第4部分草稿 | 0.4d | 2018-12-07 19:00 A | 2018-12-08 20:00 |  |  | 蓝舒雯 |
| 142 | **团建** | 0.1d | 2018-10-07 19:00 A | 2018-10-07 20:00 A |  |  |  |
| 143 | 第一次团建 | 0.2d | 2018-10-07 19:00 A | 2018-10-07 20:00 A | 3 |  | 赵佳锋; 蓝舒雯; 刘祺; 陈铭阳; 赵唯皓 |
| 152 | G12-第8次例会（临时） | 0.2d | 2018-11-19 13:00 A | 2018-11-19 14:00 A | 151 |  | 赵佳锋; 蓝舒雯; 刘祺; 陈铭阳; 赵唯皓 |
| 155 | G12-第11次例会（临时） | 0.4d | 2018-12-01 10:00 A | 2018-12-01 20:00 A | 154 |  | 赵佳锋; 蓝舒雯; 刘祺; 陈铭阳; 赵唯皓 |
| 158 | G12-第14次例会（常规） | 0.1d | 2018-12-20 19:00 | 2018-12-20 19:30 | 157 |  | 赵佳锋; 蓝舒雯; 刘祺; 陈铭阳; 赵唯皓 |
| 159 | G12-第15次例会（常规） | 0.2d | 2018-12-27 19:00 | 2018-12-27 20:00 | 158 |  | 赵佳锋; 蓝舒雯; 刘祺; 陈铭阳; 赵唯皓 |
| 160 | G12-第16次例会（常规） | 0.4d | 2019-01-07 18:00 | 2019-01-07 20:00 | 159 |  |  |
| 163 | 需求计划评审第一次 | 0.3d | 2018-11-29 15:00 A | 2018-11-29 16:30 A | 51, 68, 73 |  | 赵佳锋; 蓝舒雯; 陈铭阳; 赵唯皓 |
| 164 | 需求计划评审（重评） | 0.2d | 2018-12-12 19:00 | 2018-12-12 20:00 | 163, 69, 74, 156, 53 |  | 赵佳锋; 蓝舒雯; 刘祺; 陈铭阳; 赵唯皓 |

Removed: 67 《QA计划》编写和组内审核; 68 寻找《QA计划》模板; 69 编写《QA计划》第1部分; 70 编写《QA计划》第1部分; 71 编写《QA计划》第2部分; 72 编写《QA计划》第3部分; 73 《QA计划》组内审核; 91 分析用户工作流程; 108 创建需求跟踪能力矩阵; 116 修订需求规格说明书; 119 召开紧急会议确定变更控制过程; 120 分析变更影响; 121 跟踪每一项变更; 122 跟踪需求状态; 124 修订需求文档的基准版本和控制版本; 126 组内审核修订《需求变更控制文档》; 136 G12-第8次例会（常规）; 139 G12-第11次例会（常规）; 150 制作项目总结报告PPT-2

Changed:

| ID | Task | Start | Finish | Duration | Complete | Predecessors | Other |
| --- | --- | --- | --- | --- | --- | --- | --- |
| 1 | **软件工程系列课程教学辅助网站-需求工程项目** |  |  | 26.6d → 37d | 44% → 45% |  |  |
| 2 | **项目启动** |  |  |  | 100% → 88% |  |  |
| 3 | 确定小组人员并成立G12小组 |  |  |  |  |  | resources 陈铭阳; 蓝舒雯; 刘祺; 赵佳锋; 赵唯皓 → 赵佳锋; 蓝舒雯; 刘祺; 陈铭阳; 赵唯皓 |
| 4 | 项目任务书下达 |  |  |  |  |  | resources 杨枨老师; 侯宏仑老师 → none |
| 5 | 安装配置管理工具初步 |  | 2018-09-22 20:00 A → 2018-09-24 20:00 (+2d) | 0.4d → 0.6d | 100% → 67% |  | was named 安装配置管理工具; resources 陈铭阳; 赵佳锋 → 赵佳锋; 陈铭阳 |
| 7 | **知识储备** |  |  | 16d → 18.9d | 36% → 60% |  |  |
| 9 | PPT1-4部分 |  |  |  |  |  | resources 陈铭阳 → 赵佳锋 |
| 12 | PPT 第7部分 |  | 2018-10-10 19:00 → 2018-10-09 20:00 A (-1d) | 0d → 0.4d |  |  | resources 赵佳锋 → 陈铭阳 |
| 14 | 整合制成PPt |  | 2018-10-12 20:00 A | 0d → 0.2d |  |  |  |
| 15 | 审核检查 |  | 2018-10-13 19:00 A → 2018-10-13 20:00 A | 0d → 0.2d |  |  |  |
| 16 | **UML工具** |  |  |  | 100% → 88% |  |  |
| 18 | PPT 2-5部分资料收集 |  | 2018-10-16 20:00 → 2018-10-17 20:00 (+1d) | 0d → 0.2d | 100% → 0% |  | resources 陈铭阳 → 赵佳锋 |
| 20 | PPT 第6部分资料收集 |  | 2018-10-16 19:00 → 2018-10-17 20:00 A (+1d) | 0d → 0.2d |  |  | resources 赵佳锋 → 陈铭阳 |
| 21 | PPT 第7部分资料收集 |  | 2018-10-16 19:00 → 2018-10-15 20:00 A (-1d) | 0d → 0.2d |  |  |  |
| 24 | PPT 第2部分 |  | 2018-10-23 20:00 A → 2018-10-22 20:00 A (-1d) | 0d → 0.1d |  |  |  |
| 26 | PPT 第4部分 |  | 2018-10-23 19:00 → 2018-10-22 20:00 A (-1d) |  |  |  | resources 赵佳锋 → 陈铭阳 |
| 28 | PPT 1、5、6、8、9部分 |  |  |  |  |  | resources 陈铭阳 → 赵佳锋 |
| 35 | 「原型的使用和评估」部分 |  |  | 0d → 0.4d |  |  | resources 赵佳锋 → 陈铭阳 |
| 36 | 「原型的未来用途和形式」和「Axure RP的界面和使用」部分 |  |  | 0d → 0.4d |  |  | resources 陈铭阳 → 赵佳锋 |
| 37 | PPT整合 |  |  | 0d → 0.2d |  |  |  |
| 38 | PPt小组内审核及修改 |  |  | 0d → 0.2d |  |  |  |
| 39 | **UML基础3** | 2018-12-03 08:00 → 2018-12-07 08:00 (+4d) | 2018-12-09 17:00 → 2018-12-08 08:00 (-1d) | 6.8d → 4d | 0% → 100% |  |  |
| 44 | PPT第三部分 | 2018-12-03 08:00 → 2018-12-05 19:00 A (+2d) | 2018-12-12 20:00 → 2018-12-05 20:00 A (-7d) | 4d → 0.2d | 0% → 100% |  | was named 赶制ppt; resources none → 蓝舒雯 |
| 45 | **UML基础4** |  |  | 6.8d → 5.2d |  |  |  |
| 46 | 制作ppt |  | 2018-12-26 11:00 → 2018-12-21 20:00 (-5d) |  |  |  |  |
| 47 | **项目计划** |  |  | 5d → 5.3d | 96% → 100% |  |  |
| 49 | 寻找《可行性分析报告》模板 |  |  |  |  | none → 5 |  |
| 50 | 编写《可行性分析报告1》 |  |  |  |  |  | was named 编写《可行性分析报告》 |
| 51 | 编写《可行性分析报告2》 |  |  |  |  |  | was named 《可行性分析报告》的组内审查修订; resources 赵佳锋 → 陈铭阳 |
| 54 | **《需求工程项目计划》的编写和修订** |  | 2018-09-30 20:00 → 2018-12-01 11:00 (+62d) | 1.4d → 12.4d | 92% → 100% |  |  |
| 55 | 找寻《项目计划》模板 |  |  |  |  |  | resources 赵佳锋 → 陈铭阳 |
| 56 | WBS、OBS的绘制 | 2018-09-25 19:00 A → 2018-09-24 19:00 A (-1d) | 2018-09-26 20:00 A → 2018-09-27 20:00 A (+1d) | 0.2d → 0.6d |  |  | constraint start no earlier than 2018-09-25 19:00 → start no earlier than 2018-09-24 19:00 |
| 57 | 制定《需求工程项目计划》第一部分 | 2018-09-28 19:00 A → 2018-09-25 19:00 A (-3d) | 2018-09-28 20:00 A → 2018-09-26 20:00 A (-2d) | 0.2d → 0.4d |  | 55 → 55, 6 | resources 赵唯皓 → 赵佳锋 |
| 58 | 制定《需求工程项目计划》第二部分 | 2018-09-25 19:00 A → 2018-09-28 19:30 A (+3d) | 2018-09-26 20:00 A → 2018-10-07 18:30 A (+11d) | 0d → 0.38d |  |  | resources 陈铭阳 → 赵佳锋 |
| 59 | 修订《需求工程项目计划》 |  |  |  |  |  | resources 赵唯皓 → 陈铭阳 |
| 61 | 审核第一次修订后的需求工程计划 |  |  |  |  |  | resources 赵佳锋 → 陈铭阳 |
| 62 | 第二次修订需求工程计划 |  |  |  |  |  | resources 赵佳锋 → 陈铭阳 |
| 65 | 审核第三次修订后的需求工程计划 |  |  |  |  |  | resources 赵佳锋 → 陈铭阳 |
| 68 | 第四次修改需求工程计划 | 2018-11-24 19:00 A | 2018-11-24 20:00 A |  | 0% → 100% |  |  |
| 70 | **《项目章程》编写和审查** |  | 2018-10-21 20:00 → 2018-12-01 11:00 (+41d) | 1.4d → 9.7d |  |  |  |
| 73 | 《项目章程》审核修订1 |  |  |  |  |  | was named 《项目章程》审核修订 |
| 75 | **项目执行** |  |  | 5.6d → 6.9d | 33% → 24% |  |  |
| 76 | **需求获取** |  | 2018-11-11 20:00 → 2018-12-31 20:00 (+50d) | 1.4d → 14.3d | 82% → 53% |  |  |
| 77 | **定义及编写项目视图与范围** |  | 2018-11-06 20:00 → 2018-11-09 20:00 (+3d) | 0.4d → 1d | 100% → 90% |  |  |
| 80 | 愿景和范围文档第二部分 |  |  |  |  |  | resources 赵佳锋 → 陈铭阳 |
| 86 | 绘制范围可视化表示--特性树 |  |  |  |  |  | resources 陈铭阳 → 赵佳锋 |
| 90 | 界面初步设计1 |  | 2018-11-17 19:00 → 2018-11-16 20:00 A (-1d) |  |  |  |  |
| 93 | 需求获取访谈1 |  |  |  |  |  | resources 陈铭阳; 刘祺; 杨枨老师; 赵唯皓; 蓝舒雯 → 赵佳锋; 刘祺; 赵唯皓; 蓝舒雯 |
| 105 | 检查问题报告1 | 2018-11-27 19:00 → 2018-12-10 19:00 (+13d) | 2018-11-27 20:00 → 2018-12-12 20:00 (+15d) | 0.2d → 0.6d |  | 分析用户工作流程 → 96 | was named 检查问题报告; resources 赵佳锋 → 刘祺 |
| 107 | 召开应用程序开发联系会议 | 2018-11-28 19:00 A → 2018-12-16 08:00 A (+18d) | 2018-11-28 20:00 → 2018-12-16 09:00 (+18d) |  |  | 105 → 106, 100, 102, 104 | resources 陈铭阳; 蓝舒雯; 刘祺; 赵唯皓; 杨枨老师; 侯宏仑老师 → 赵佳锋; 蓝舒雯; 刘祺; 赵唯皓; 陈铭阳 |
| 108 | 需求重用 | 2018-11-30 19:00 → 2018-12-17 17:00 (+17d) | 2018-12-01 20:00 → 2018-12-17 21:00 (+16d) | 0.4d → 0.8d |  |  | resources 陈铭阳 → 赵佳锋 |
| 109 | **需求分析** |  |  | 7.6d → 9d |  |  |  |
| 110 | 创建开发原型 | 2018-12-03 19:00 → 2018-12-18 19:00 (+15d) | 2018-12-04 20:00 → 2018-12-19 20:00 (+15d) |  |  |  |  |
| 111 | 分析可行性1 | 2018-12-04 19:00 → 2018-12-18 19:00 (+14d) | 2018-12-04 20:00 → 2018-12-19 20:00 (+15d) | 0.2d → 0.4d |  | 110FF → 108 | was named 分析可行性 |
| 113 | 确认需求优先级 | 2018-12-05 19:00 → 2018-12-18 19:00 (+13d) | 2018-12-05 20:00 → 2018-12-19 20:00 (+14d) | 0.2d → 0.4d |  | 111 → 108 |  |
| 115 | 需求建模 | 2018-12-07 19:00 → 2018-12-18 19:00 (+11d) | 2018-12-08 20:00 → 2018-12-19 20:00 (+11d) |  |  | 113 → 108 |  |
| 117 | 编写数据字典 | 2018-12-07 19:00 → 2018-12-18 19:00 (+11d) | 2018-12-08 20:00 → 2018-12-19 20:00 (+11d) |  |  | 115SS → 108 |  |
| 119 | 应用质量功能调配 | 2018-12-08 19:00 → 2018-12-23 09:00 (+15d) | 2018-12-10 20:00 → 2018-12-23 12:00 (+13d) | 0.4d → 0.6d |  | 117, 115 → 110, 112, 114, 116, 118 | resources 蓝舒雯; 刘祺 → 陈铭阳; 蓝舒雯; 刘祺; 赵佳锋; 赵唯皓 |
| 120 | **需求规格说明** | 2018-12-10 19:00 → 2018-12-01 19:00 (-9d) | 2018-12-15 20:00 → 2018-12-30 19:30 (+15d) | 1.2d → 7.5d | 0% → 9% |  |  |
| 121 | **采用需求规格说明模板** | 2018-12-10 19:00 → 2018-12-03 19:00 (-7d) | 2018-12-10 20:00 → 2018-12-05 20:00 (-5d) | 0.2d → 0.8d | 0% → 25% |  | resources 陈铭阳 → none |
| 126 | 指明需求来源 | 2018-12-11 19:00 → 2018-12-24 19:00 (+13d) | 2018-12-12 20:00 → 2018-12-26 20:00 (+14d) | 0.4d → 0.6d |  | 121 → 119 | resources 刘祺 → 蓝舒雯 |
| 127 | 为每一项需求注上标号 | 2018-12-14 19:00 → 2018-12-24 19:00 (+10d) | 2018-12-14 20:00 → 2018-12-26 20:00 (+12d) | 0.2d → 0.6d |  | 126FF → 119 |  |
| 128 | 记录业务规范 | 2018-12-11 19:00 → 2018-12-24 19:00 (+13d) | 2018-12-12 20:00 → 2018-12-26 20:00 (+14d) | 0.4d → 0.6d |  | 121 → 119 | resources 蓝舒雯 → 赵佳锋 |
| 129 | 创建需求跟踪能力矩阵 | 2018-12-11 19:00 → 2018-12-24 19:00 (+13d) | 2018-12-12 20:00 → 2018-12-26 20:00 (+14d) | 0.4d → 0.6d |  | 121 → 119 | resources 赵唯皓 → 刘祺 |
| 130 | 初定需求规格说明书 | 2018-12-14 19:00 → 2018-12-28 19:00 (+14d) | 2018-12-15 20:00 → 2018-12-29 20:00 (+14d) |  |  | 121, 126, 127, 128, 129FF → 122, 123, 124, 125, 126, 127, 128, 129 | resources 陈铭阳; 刘祺 → 陈铭阳; 蓝舒雯; 刘祺; 赵佳锋; 赵唯皓 |
| 131 | **需求规格审核** |  | 2018-12-22 20:00 → 2018-12-31 20:00 (+9d) | 3.4d → 6d |  |  |  |
| 132 | 审查并修订需求规格说明 | 2018-12-17 19:00 → 2018-12-31 17:00 (+14d) | 2018-12-19 20:00 → 2018-12-31 21:00 (+12d) | 0.6d → 0.8d |  |  | was named 审查需求规格说明; resources 蓝舒雯 → 蓝舒雯; 陈铭阳; 刘祺; 赵佳锋; 赵唯皓 |
| 133 | 编写测试用例 | 2018-12-17 19:00 → 2019-01-01 17:00 (+15d) | 2018-12-19 20:00 → 2019-01-01 23:00 (+13d) | 0.6d → 1.2d |  | none → 132 | resources 赵佳锋 → 陈铭阳; 刘祺 |
| 134 | 修订测试用例 | 2018-12-21 19:00 → 2019-01-02 17:00 (+12d) | 2018-12-21 20:00 → 2019-01-02 20:00 (+12d) | 0.2d → 0.6d |  |  | resources 赵佳锋 → 蓝舒雯 |
| 135 | 编写用户手册 | 2018-12-17 19:00 → 2019-01-01 17:00 (+15d) | 2018-12-19 20:00 → 2019-01-01 23:00 (+13d) | 0.6d → 1.2d |  | none → 132 | resources 刘祺 → 赵佳锋; 赵唯皓 |

| ID | Task | Start | Finish | Duration | Complete | Total float | Predecessors | Other |
| --- | --- | --- | --- | --- | --- | --- | --- | --- |
| 136 | 修订用户手册 | 2018-12-21 19:00 → 2019-01-02 20:00 (+12d) | 2018-12-21 20:00 → 2019-01-02 21:00 (+12d) |  |  |  | 135 → 135, 132 | resources 陈铭阳; 刘祺 → 蓝舒雯 |
| 137 | **需求管理** | 2018-12-24 09:00 A → 2018-12-24 09:00 | 2018-12-29 20:00 → 2019-01-04 11:00 (+6d) | 1.8d → 9d |  | 0d → none |  |  |
| 138 | 建立变更控制委员会 | 2018-12-24 09:00 → 2019-01-03 18:00 (+10d) | 2018-12-24 10:00 → 2019-01-03 20:00 (+10d) | 0.2d → 0.4d |  |  | 修订需求规格说明书 → none | resources 陈铭阳; 蓝舒雯; 刘祺; 赵佳锋; 赵唯皓; 杨枨老师; 侯宏仑老师 → 赵佳锋; 蓝舒雯; 刘祺; 陈铭阳; 赵唯皓 |
| 139 | 编写需求文档的基准版本和控制版本 | 2018-12-28 19:00 → 2019-01-04 16:00 (+7d) | 2018-12-28 20:00 → 2019-01-04 23:00 (+7d) | 0.2d → 1.4d |  |  | 分析变更影响, 跟踪每一项变更, 跟踪需求状态 → 138 | resources 蓝舒雯 → 蓝舒雯; 陈铭阳; 刘祺; 赵佳锋; 赵唯皓 |
| 140 | 编写《需求变更控制文档》 | 2018-12-28 19:00 → 2019-01-05 16:00 (+8d) | 2018-12-28 20:00 → 2019-01-05 23:00 (+8d) | 0.2d → 1.4d |  |  | 分析变更影响, 跟踪每一项变更, 跟踪需求状态 → 138 | resources 陈铭阳; 刘祺 → 赵佳锋; 刘祺; 陈铭阳; 蓝舒雯; 赵唯皓 |
| 141 | **项目控制** |  |  | 7.2d → 10.9d | 40% → 55% |  |  |  |
| 144 | **小组例会** |  | 2018-12-27 20:00 → 2019-01-04 20:00 (+8d) | 16d → 23.8d | 62% → 64% | 0d → none |  |  |
| 145 | G12-第1次例会（常规） |  | 2018-09-27 20:00 A → 2018-09-28 19:30 A (+1d) | 0.2d → 0.1d |  |  |  | resources 陈铭阳; 蓝舒雯; 刘祺; 赵佳锋; 赵唯皓 → 赵佳锋; 蓝舒雯; 刘祺; 陈铭阳; 赵唯皓 |
| 146 | G12-第2次例会（常规） |  | 2018-10-11 20:00 A → 2018-10-11 19:30 A | 0.2d → 0.1d |  |  |  | resources 陈铭阳; 蓝舒雯; 刘祺; 赵佳锋; 赵唯皓 → 赵佳锋; 蓝舒雯; 刘祺; 陈铭阳; 赵唯皓 |
| 147 | G12-第3次例会（常规） |  | 2018-10-18 20:00 A → 2018-10-18 19:30 A | 0.2d → 0.1d |  |  |  | resources 陈铭阳; 蓝舒雯; 刘祺; 赵佳锋; 赵唯皓 → 赵佳锋; 蓝舒雯; 刘祺; 陈铭阳; 赵唯皓 |
| 148 | G12-第4次例会（常规） |  | 2018-10-25 20:00 A → 2018-10-25 19:30 A | 0.2d → 0.1d |  |  |  | resources 陈铭阳; 蓝舒雯; 刘祺; 赵佳锋; 赵唯皓 → 赵佳锋; 蓝舒雯; 刘祺; 陈铭阳; 赵唯皓 |
| 149 | G12-第5次例会（常规） |  | 2018-11-01 20:00 A → 2018-11-01 19:30 A | 0.2d → 0.1d |  |  |  | resources 陈铭阳; 蓝舒雯; 刘祺; 赵佳锋; 赵唯皓 → 赵佳锋; 蓝舒雯; 刘祺; 陈铭阳; 赵唯皓 |
| 150 | G12-第6次例会（常规） |  | 2018-11-08 20:00 A → 2018-11-15 19:30 A (+7d) | 0.2d → 0.1d |  |  |  | resources 陈铭阳; 蓝舒雯; 刘祺; 赵佳锋; 赵唯皓 → 赵佳锋; 蓝舒雯; 刘祺; 陈铭阳; 赵唯皓 |
| 151 | G12-第7次例会（常规） | 2018-11-19 19:00 A → 2018-11-15 19:00 A (-4d) | 2018-11-19 20:00 A → 2018-11-15 19:30 A (-4d) | 0.2d → 0.1d |  |  |  | resources 陈铭阳; 蓝舒雯; 刘祺; 赵佳锋; 赵唯皓 → 赵佳锋; 蓝舒雯; 刘祺; 陈铭阳; 赵唯皓 |
| 153 | G12-第9次例会（常规） | 2018-11-29 19:00 A → 2018-11-22 19:00 A (-7d) | 2018-11-29 20:00 → 2018-11-22 19:30 A (-7d) | 0.2d → 0.1d | 0% → 100% |  | G12-第8次例会（常规） → 152 | resources 陈铭阳; 蓝舒雯; 刘祺; 赵佳锋; 赵唯皓 → 赵佳锋; 蓝舒雯; 刘祺; 陈铭阳; 赵唯皓 |
| 154 | G12-第10次例会（常规） | 2018-12-06 19:00 → 2018-11-29 19:00 A (-7d) | 2018-12-06 20:00 → 2018-11-29 19:30 A (-7d) | 0.2d → 0.1d | 0% → 100% |  |  | resources 陈铭阳; 蓝舒雯; 刘祺; 赵佳锋; 赵唯皓 → 赵佳锋; 蓝舒雯; 刘祺; 陈铭阳; 赵唯皓 |
| 156 | G12-第12次例会（常规） | 2018-12-20 19:00 → 2018-12-06 19:00 A (-14d) | 2018-12-20 20:00 → 2018-12-06 19:30 A (-14d) | 0.2d → 0.1d | 0% → 100% |  | G12-第11次例会（常规） → 155 | resources 陈铭阳; 蓝舒雯; 刘祺; 赵佳锋; 赵唯皓 → 赵佳锋; 蓝舒雯; 刘祺; 陈铭阳; 赵唯皓 |
| 157 | G12-第13次例会（常规） | 2018-12-27 19:00 → 2018-12-13 19:00 A (-14d) | 2018-12-27 20:00 → 2018-12-13 20:00 (-14d) |  |  |  |  | resources 陈铭阳; 蓝舒雯; 刘祺; 赵佳锋; 赵唯皓 → 赵佳锋; 蓝舒雯; 刘祺; 陈铭阳; 赵唯皓 |
| 161 | **过程评审** | 2018-11-20 08:00 → 2018-11-11 11:00 A (-9d) | 2019-01-02 11:00 → 2019-01-09 22:00 (+7d) | 9.4d → 20.1d | 0% → 27% |  |  |  |
| 162 | **需求工程项目计划评审** | 2018-11-20 08:00 → 2018-11-11 11:00 (-9d) | 2018-11-20 11:00 → 2018-12-13 11:00 (+23d) | 0.6d → 11.5d | 0% → 60% |  | 68 → none | resources 陈铭阳; 蓝舒雯; 刘祺; 杨枨老师; 赵佳锋; 赵唯皓 → none |
| 165 | 需求规格说明文档评审 | 2018-12-26 10:00 → 2019-01-06 18:00 (+11d) | 2018-12-26 11:00 → 2019-01-06 20:00 (+11d) | 0.2d → 0.4d |  | -2.4d → none | 修订需求规格说明书 → 132, 134, 136 | constraint finish no earlier than 2018-12-26 11:00 → start no earlier than 2019-01-06 18:00; resources 陈铭阳; 蓝舒雯; 刘祺; 杨枨老师; 赵佳锋; 赵唯皓 → 赵佳锋; 蓝舒雯; 刘祺; 陈铭阳; 赵唯皓 |
| 166 | 需求变更控制文档评审 | 2019-01-02 08:00 → 2019-01-09 21:00 (+7d) | 2019-01-02 11:00 → 2019-01-09 22:00 (+7d) | 0.6d → 0.2d |  |  | 组内审核修订《需求变更控制文档》 → 139, 140 | resources 陈铭阳; 蓝舒雯; 刘祺; 杨枨老师; 赵佳锋; 赵唯皓 → 赵佳锋; 蓝舒雯; 刘祺; 陈铭阳; 赵唯皓 |
| 167 | **项目收尾** |  |  | 4.8d → 10.2d |  |  |  |  |
| 168 | 整合已完成文档 | 2019-01-03 19:00 → 2019-01-10 19:00 (+7d) | 2019-01-03 20:00 → 2019-01-10 22:00 (+7d) | 0.2d → 0.6d |  |  | 162, 165, 166 → 165, 166, 164 | resources 陈铭阳; 蓝舒雯; 刘祺; 赵佳锋; 赵唯皓 → 赵佳锋; 蓝舒雯; 刘祺; 陈铭阳; 赵唯皓 |
| 169 | 编写项目总结报告 | 2019-01-04 19:00 → 2019-01-11 19:00 (+7d) | 2019-01-05 20:00 → 2019-01-11 22:00 (+6d) | 0.4d → 0.6d |  |  |  |  |
| 170 | 制作项目总结报告PPT-1 | 2019-01-05 19:00 → 2019-01-12 19:00 (+7d) | 2019-01-05 20:00 → 2019-01-12 21:00 (+7d) | 0.2d → 0.4d |  |  |  |  |
| 171 | 最终评审 | 2019-01-09 08:00 → 2019-01-13 19:00 (+4d) | 2019-01-09 09:00 → 2019-01-13 20:00 (+4d) |  |  |  | 170, 制作项目总结报告PPT-2 → 170 | resources 陈铭阳; 蓝舒雯; 刘祺; 杨枨老师; 赵佳锋; 赵唯皓; 侯宏仑老师 → 赵佳锋; 蓝舒雯; 刘祺; 陈铭阳; 赵唯皓 |
| 172 | 按评审要求修改需提交的文档并提交 | 2019-01-10 19:00 → 2019-01-14 19:00 (+4d) | 2019-01-11 20:00 → 2019-01-14 20:00 (+3d) | 0.4d → 0.2d |  |  |  | resources none → 陈铭阳; 蓝舒雯; 刘祺; 赵佳锋; 赵唯皓 |
| 173 | 散伙饭 | 2019-01-12 19:00 → 2019-01-15 18:00 (+3d) | 2019-01-12 20:00 → 2019-01-15 21:00 (+3d) | 0.2d → 0.6d |  |  |  | resources 陈铭阳; 蓝舒雯; 刘祺; 赵佳锋; 赵唯皓 → 赵佳锋; 蓝舒雯; 刘祺; 陈铭阳; 赵唯皓 |
